# CRO - JEDI

How a schedule from MS Project changed from version to version. A marks actual dates.

## Version 1 (saved 2011-09-09)

Note of the change: Nova organização dos diretórios referente a documentos. Rafael, Daniel e Wlysses.

| ID | WBS | Task | Duration | Start | Finish | Predecessors | Complete | Total float | Constraint |
| --- | --- | --- | --- | --- | --- | --- | --- | --- | --- |
| 1 | 1 | **Fitness Mobile - JEDI** | 31d | 2011-08-22 09:00 A | 2011-10-03 18:00 |  | 12% | 0d |  |
| 2 | 1.1 | **RF_11: Escolha do modo de visualização** | 15.12d | 2011-08-22 09:00 A | 2011-09-12 10:00 |  | 35% | 15.88d |  |
| 3 |  | Realizar análise do requisito | 1h | 2011-08-22 09:00 A | 2011-08-22 10:00 A |  | 100% |  |  |
| 4 |  | Criar Diagrama de Classes, Caso de Uso e Diagrama Objeto Relacional | 30min | 2011-08-22 10:00 A | 2011-08-22 10:30 A | 3 | 100% |  |  |
| 5 |  | Definir a interface de interação com o usuário | 1h | 2011-08-22 10:30 A | 2011-08-22 11:30 A | 4 | 100% |  |  |
| 6 |  | Codificar | 4h | 2011-09-09 09:00 A | 2011-09-09 14:00 | 5 | 38% | 15.88d |  |
| 7 |  | Revisar | 4h | 2011-09-09 14:00 | 2011-09-09 18:00 | 6 |  | 15.88d |  |
| 8 |  | Testar | 1h | 2011-09-12 09:00 | 2011-09-12 10:00 | 7 |  | 15.88d |  |
| 9 | 1.2 | **RF_01: Manter dados do Usuário** | 15d | 2011-08-29 09:00 A | 2011-09-16 18:00 |  | 17% | 11d |  |
| 10 |  | Realizar análise do requisito | 1h | 2011-08-29 09:00 A | 2011-08-29 10:00 A |  | 100% |  | start no earlier than 2011-08-29 09:00 |
| 11 |  | Criar Diagrama de Classes, Caso de Uso e Diagrama Objeto Relacional | 1h | 2011-08-29 10:00 A | 2011-08-29 11:00 A | 10 | 100% |  |  |
| 12 |  | Criação da camada de acesso à base de dados | 2h | 2011-08-29 11:00 A | 2011-08-29 14:00 A | 11 | 100% |  |  |
| 13 |  | Codificação do CRUD | 2h | 2011-09-09 09:00 | 2011-09-09 11:00 | 12 |  | 15.5d | start no earlier than 2011-09-09 09:00 |
| 14 |  | Revisar | 1h | 2011-09-09 11:00 | 2011-09-09 12:00 | 13 |  | 15.5d |  |
| 15 |  | Testar | 1h | 2011-09-09 13:00 | 2011-09-09 14:00 | 14 |  | 15.5d |  |
| 16 |  | Preparar apresentação da sprint | 1d | 2011-09-16 09:00 | 2011-09-16 18:00 | 15 |  | 11d | start no earlier than 2011-09-16 09:00 |
| 17 |  | Apresentar os resultados do RF 01 e RF 11 | 1d | 2011-09-16 09:00 | 2011-09-16 18:00 | 16FF |  | 11d |  |
| 18 | 1.3 | **RF_06: Mostrar o desenvolvimento do usuário por periodo** | 5.5d | 2011-09-05 09:00 | 2011-09-12 14:00 |  |  | 15.5d |  |
| 19 |  | Analisar o requisito | 8h | 2011-09-05 09:00 | 2011-09-05 18:00 |  |  | 18.75d | finish no earlier than 2011-09-05 18:00 |
| 20 |  | Criar Diagrama de Classes, Caso de Uso e Diagrama Objeto Relacional | 6h | 2011-09-06 09:00 | 2011-09-06 16:00 | 19 |  | 18.75d | start no earlier than 2011-09-05 09:00 |
| 21 |  | Codificar | 4h | 2011-09-06 16:00 | 2011-09-07 11:00 | 20 |  | 18.75d |  |
| 22 |  | Revisar | 4h | 2011-09-12 09:00 | 2011-09-12 14:00 |  |  | 15.5d | start no earlier than 2011-09-12 09:00 |
| 23 | 1.4 | **RF_10: Controle das atividades durante o exercício** | 0.31d | 2011-09-19 09:00 | 2011-09-19 11:30 |  |  | 10.69d |  |
| 24 |  | Realizar análise do requisito | 1h | 2011-09-19 09:00 | 2011-09-19 10:00 |  |  | 10.69d | start no earlier than 2011-09-19 09:00 |
| 25 |  | Criar Diagrama de Classes, Caso de Uso e Diagrama Objeto Relacional | 30min | 2011-09-19 10:00 | 2011-09-19 10:30 | 24 |  | 10.69d | start no earlier than 2011-09-19 09:00 |
| 26 |  | Definir a interface de interação com o usuário | 30min | 2011-09-19 10:30 | 2011-09-19 11:00 | 25 |  | 10.69d | start no earlier than 2011-09-19 09:00 |
| 27 |  | Codificar | 0.06d | 2011-09-19 11:00 | 2011-09-19 11:30 | 26 |  | 10.69d |  |
| 28 | 1.5 | **RF_12: Exportar Informações** | 1d | 2011-10-03 09:00 | 2011-10-03 18:00 |  |  | 0d |  |
| 29 |  | Realizar análise do requisito | 1.5h | 2011-10-03 09:00 | 2011-10-03 10:30 |  |  | 0d | start no earlier than 2011-10-03 09:00 |
| 30 |  | Criar Diagrama de Classes, Caso de Uso e Diagrama de Sequencia | 1h | 2011-10-03 10:30 | 2011-10-03 11:30 | 29 |  | 0d | start no earlier than 2011-10-03 09:00 |
| 31 |  | Codificar | 3h | 2011-10-03 11:30 | 2011-10-03 15:30 | 30 |  | 0d | start no earlier than 2011-10-03 09:00 |
| 32 |  | Revisar | 30min | 2011-10-03 15:30 | 2011-10-03 16:00 | 31 |  | 0d | start no earlier than 2011-10-03 09:00 |
| 33 |  | Testar | 2h | 2011-10-03 16:00 | 2011-10-03 18:00 | 32 |  | 0d | start no earlier than 2011-10-03 09:00 |

## Version 2 (saved 2011-10-28)

Note of the change: Update Cronograma Jedi - Realizado pelo prof. Eriko em sala de aula ...

Last finish 2011-10-03 → 2011-11-04 (+32d). Complete tasks 6 → 22.

Added:

| ID | Task | Duration | Start | Finish | Predecessors | Constraint | Resources |
| --- | --- | --- | --- | --- | --- | --- | --- |
| 21 | Escolha e tratamento da imagem anatômica | 3h | 2011-09-06 16:00 A | 2011-09-07 10:00 A | 20 |  |  |
| 22 | Recorte da imagem, fazendo a divisão por músculos individuais | 3h | 2011-09-07 10:00 A | 2011-09-07 14:00 A | 21 |  |  |
| 23 | Mudanças no diagrama de classe | 276h | 2011-09-07 14:00 A | 2011-10-25 18:00 | 22 | finish no earlier than 2011-10-25 18:00 |  |
| 24 | Criação do DAO | 3h | 2011-09-07 17:00 A | 2011-09-08 11:00 A | 23 |  |  |
| 25 | Mudança no código-fonte, adequando os tratamentos aos retornos do DAO | 3h | 2011-09-08 11:00 A | 2011-09-08 15:00 A | 24 |  |  |
| 33 | Testar | 3h | 2011-08-22 09:00 | 2011-08-22 12:00 |  |  |  |
| 34 | Criar slide sobre o desenvolvimento do requisito | 1h | 2011-08-22 09:00 A | 2011-08-22 10:00 A |  |  |  |
| 35 | Apresentar os requisitos | 1h | 2011-08-22 09:00 A | 2011-08-22 10:00 A |  |  |  |
| 42 | Criar slide sobre o desenvolvimento do requisito | 1h | 2011-11-04 11:00 | 2011-11-04 12:00 | 41 |  | Davi, Eduardo |
| 43 | Apresentar os requisitos | 1h | 2011-11-04 13:00 | 2011-11-04 14:00 | 42 |  | Ivan, Orlando |

Changed:

| ID | Task | Start | Finish | Duration | Complete | Total float | Predecessors | Other |
| --- | --- | --- | --- | --- | --- | --- | --- | --- |
| 1 | **Fitness Mobile - JEDI** |  | 2011-10-03 18:00 → 2011-11-04 14:00 (+32d) | 31d → 54.5d | 12% → 7% |  |  |  |
| 9 | **RF_01: Manter dados do Usuário** |  |  |  | 17% → 99% | 11d → 0d |  |  |
| 13 | Codificação do CRUD | 2011-09-09 09:00 A | 2011-09-09 11:00 A |  | 0% → 100% | 15.5d → none |  |  |
| 14 | Revisar | 2011-09-09 11:00 A | 2011-09-09 12:00 A |  | 0% → 100% | 15.5d → none |  |  |
| 15 | Testar | 2011-09-09 13:00 A | 2011-09-09 14:00 A |  | 0% → 100% | 15.5d → none |  |  |
| 16 | Preparar apresentação da sprint | 2011-09-16 09:00 A | 2011-09-16 18:00 A |  | 0% → 100% | 11d → none |  |  |
| 17 | Apresentar os resultados do RF 01 e RF 11 | 2011-09-16 09:00 A | 2011-09-16 18:00 A |  | 0% → 100% | 11d → none |  |  |
| 18 | **RF_06: Mostrar o desenvolvimento do usuário por periodo** | 2011-09-05 09:00 A | 2011-09-12 14:00 → 2011-10-26 18:00 (+44d) | 5.5d → 38d | 0% → 4% | 15.5d → 6.5d |  |  |
| 19 | Analisar o requisito | 2011-09-05 09:00 A | 2011-09-05 18:00 A |  | 0% → 100% | 18.75d → none |  |  |
| 20 | Criar Diagrama de Classes e Caso de Uso | 2011-09-06 09:00 A | 2011-09-06 16:00 A |  | 0% → 100% | 18.75d → none |  | was named Criar Diagrama de Classes, Caso de Uso e Diagrama Objeto Relacional |
| 26 | Codificar | 2011-09-06 16:00 → 2011-09-08 15:00 A (+2d) | 2011-09-07 11:00 → 2011-10-26 18:00 (+49d) | 4h → 275h | 0% → 1% | 18.75d → 6.5d | 20 → 25 | constraint none → finish no earlier than 2011-10-26 18:00 |
| 27 | Testar |  | 2011-09-12 14:00 → 2011-10-26 18:00 (+44d) | 4h → 264h |  | 15.5d → 6.5d |  | was named Revisar; constraint start no earlier than 2011-09-12 09:00 → finish no earlier than 2011-10-26 18:00 |
| 28 | **RF_10: Controle das atividades durante o exercício** | 2011-09-19 09:00 → 2011-08-22 09:00 A (-28d) | 2011-09-19 11:30 → 2011-10-24 11:00 (+35d) | 0.31d → 45.25d | 0% → 27% | 10.69d → 9.25d |  |  |
| 29 | Realizar análise do requisito | 2011-09-19 09:00 → 2011-10-21 09:00 A (+32d) | 2011-09-19 10:00 → 2011-10-21 10:00 A (+32d) |  | 0% → 100% | 10.69d → none |  | constraint start no earlier than 2011-09-19 09:00 → start no earlier than 2011-10-21 09:00 |
| 30 | Criar Diagrama de Classes, Caso de Uso e Diagrama Objeto Relacional | 2011-09-19 10:00 → 2011-10-21 10:00 A (+32d) | 2011-09-19 10:30 → 2011-10-21 10:30 A (+32d) |  | 0% → 100% | 10.69d → none |  |  |
| 31 | Definir a interface de interação com o usuário | 2011-09-19 10:30 → 2011-10-21 10:30 A (+32d) | 2011-09-19 11:00 → 2011-10-21 11:00 A (+32d) |  | 0% → 100% | 10.69d → none |  |  |
| 32 | Codificar | 2011-09-19 11:00 → 2011-10-21 11:00 (+32d) | 2011-09-19 11:30 → 2011-10-24 11:00 (+35d) | 0.06d → 8h |  | 10.69d → 9.25d |  |  |
| 36 | **RF_12: Exportar Informações** |  | 2011-10-03 18:00 → 2011-11-04 14:00 (+32d) | 1d → 24.5d |  |  |  |  |
| 38 | Criar Diagrama de Classes, Caso de Uso e Diagrama de Sequencia | 2011-10-03 10:30 → 2011-10-28 09:00 (+25d) | 2011-10-03 11:30 → 2011-10-31 18:00 (+28d) | 1h → 2d |  |  |  | constraint start no earlier than 2011-10-03 09:00 → start no earlier than 2011-10-28 09:00 |
| 39 | Codificar | 2011-10-03 11:30 → 2011-11-01 09:00 (+29d) | 2011-10-03 15:30 → 2011-11-02 18:00 (+30d) | 3h → 2d |  |  |  |  |
| 40 | Revisar | 2011-10-03 15:30 → 2011-11-03 09:00 (+31d) | 2011-10-03 16:00 → 2011-11-03 18:00 (+31d) | 30min → 1d |  |  |  |  |
| 41 | Testar | 2011-10-03 16:00 → 2011-11-04 09:00 (+32d) | 2011-10-03 18:00 → 2011-11-04 11:00 (+32d) |  |  |  |  |  |
