# CRO - DroidMaster

How a schedule from MS Project changed from version to version. A marks actual dates.

## Version 1 (saved 2011-08-16)

Note of the change: Adicionando o cronograma do grupo DroidMaster CRO - DroidMaster.mpp ainda será analisado e validado.

| ID | WBS | Task | Duration | Start | Finish | Predecessors | Total float | Constraint |
| --- | --- | --- | --- | --- | --- | --- | --- | --- |
| 1 | 1 | **Fitness Mobile - DroidMaster** | 14.88d? | 2011-08-15 09:00 | 2011-09-02 17:00 |  | 0d |  |
| 2 | 1.1 | **Primeira Semana** | 1.62d | 2011-08-15 09:00 | 2011-08-16 15:00 |  | 3.38d |  |
| 3 | 1.1.1 | **RNF_03: Definição da UI para Aplicação** | 1.62d | 2011-08-15 09:00 | 2011-08-16 15:00 |  | 3.38d |  |
| 4 |  | Realizar análise do requisito | 3h | 2011-08-15 09:00 | 2011-08-15 12:00 |  | 3.38d | start no earlier than 2011-08-15 09:00 |
| 5 |  | Construir um prototipo | 8h | 2011-08-15 13:00 | 2011-08-16 12:00 | 4 | 3.38d |  |
| 6 |  | Reunião para definir Layout | 2h | 2011-08-16 13:00 | 2011-08-16 15:00 | 5 | 3.38d |  |
| 7 | 1.2 | **Segunda Semana** | 4.12d | 2011-08-16 15:00 | 2011-08-22 16:00 | 2 | 0d |  |
| 8 | 1.2.1 | **RF_07: Registro de rastreamento do usuário via GPS** | 0.75d | 2011-08-22 09:00 | 2011-08-22 16:00 |  | 0d |  |
| 9 |  | Realizar análise do requisito | 3h | 2011-08-22 09:00 | 2011-08-22 12:00 |  | 0d | start no earlier than 2011-08-22 09:00 |
| 10 |  | Criar Diagrama de Classes, Caso de Uso e Diagrama Objeto Relacional | 2h | 2011-08-22 13:00 | 2011-08-22 15:00 | 9 | 0d |  |
| 11 |  | Definir a interface de interação com o usuário, como o mapa será mostrado | 1h | 2011-08-22 15:00 | 2011-08-22 16:00 | 10 | 0d |  |
| 12 | 1.2.2 | **RF_08: Fornecer Mapa do percurso percorrido** | 0.25d | 2011-08-16 15:00 | 2011-08-16 17:00 |  | 3.88d |  |
| 13 |  | Realizar análise do requisito | 1.5h | 2011-08-16 15:00 | 2011-08-16 16:30 |  | 3.88d |  |
| 14 |  | Criar Diagrama de Classes, Caso de Uso e Diagrama Objeto Relacional | 0.5h | 2011-08-16 16:30 | 2011-08-16 17:00 | 13 | 3.88d |  |
| 15 | 1.2.3 | **RF_09: Disponibilizar para o usuário o desempenho no percurso rastreado** | 0.12d | 2011-08-16 15:00 | 2011-08-16 16:00 |  | 4d |  |
| 16 |  | Analisar o requisito | 0.5h | 2011-08-16 15:00 | 2011-08-16 15:30 |  | 4d |  |
| 17 |  | Criar Diagrama de Classes, Caso de Uso e Diagrama Objeto Relacional | 0.5h | 2011-08-16 15:30 | 2011-08-16 16:00 | 16 | 4d |  |
| 18 | 1.3 | **Terceira Semana** | 1.88d | 2011-08-22 16:00 | 2011-08-24 15:00 | 7 | 0d |  |
| 19 | 1.3.1 | **RNF_03: Definição da UI para Aplicação** | 1.88d | 2011-08-22 16:00 | 2011-08-24 15:00 |  | 0d |  |
| 20 |  | Criar Diagrama de Classes, Caso de Uso e Diagrama de Sequencia | 4h | 2011-08-22 16:00 | 2011-08-23 11:00 |  | 0d |  |
| 21 |  | Codificar | 7h | 2011-08-23 11:00 | 2011-08-24 10:00 | 20 | 0d |  |
| 22 |  | Revisar | 2h | 2011-08-24 10:00 | 2011-08-24 12:00 | 21 | 0d |  |
| 23 |  | Testar | 2h | 2011-08-24 13:00 | 2011-08-24 15:00 | 22 | 0d |  |
| 24 | 1.4 | **Quarta Semana** | 1.88d? | 2011-08-24 15:00 | 2011-08-26 14:00 | 18 | 0d |  |
| 25 | 1.4.1 | **RNF_03: Definição da UI para Aplicação** | 1d? | 2011-08-24 15:00 | 2011-08-25 15:00 |  | 0.88d |  |
| 26 |  | Aprovação de Layout | 8h? | 2011-08-24 15:00 | 2011-08-25 15:00 |  | 0.88d |  |
| 27 | 1.4.2 | **RF_07: Registro de rastreamento do usuário via GPS** | 1.88d | 2011-08-24 15:00 | 2011-08-26 14:00 |  | 0d |  |
| 28 |  | Criar Plano de Teste | 2h | 2011-08-24 15:00 | 2011-08-24 17:00 |  | 0d |  |
| 29 |  | Criação da funcionalidade de iniciar registro | 4.5h | 2011-08-24 17:00 | 2011-08-25 13:30 | 28 | 0d |  |
| 30 |  | Criação da funcionalidade de finalizar registro | 4.5h | 2011-08-25 13:30 | 2011-08-25 18:00 | 29 | 0d |  |
| 31 |  | Acesso API para leitura dos dados | 4h | 2011-08-26 09:00 | 2011-08-26 14:00 | 30 | 0d |  |
| 32 | 1.5 | **Quinta Semana** | 0.56d | 2011-08-26 14:00 | 2011-08-29 09:30 | 24 | 0d |  |
| 33 | 1.5.1 | **RF_08: Fornecer Mapa do percurso percorrido** | 0.56d | 2011-08-26 14:00 | 2011-08-29 09:30 |  | 0d |  |
| 34 |  | Codificar | 3.5h | 2011-08-26 14:00 | 2011-08-26 17:30 |  | 0d |  |
| 35 |  | Revisar | 1h | 2011-08-26 17:30 | 2011-08-29 09:30 | 34 | 0d |  |
| 36 | 1.5.2 | **RF_07: Registro de rastreamento do usuário via GPS** | 0.25d | 2011-08-26 14:00 | 2011-08-26 16:00 |  | 0.31d |  |
| 37 |  | Criar Plano de Teste | 2h | 2011-08-26 14:00 | 2011-08-26 16:00 |  | 0.31d |  |
| 38 | 1.5.3 | **RF_09: Disponibilizar para o usuário o desempenho no percurso rastreado** | 0.25d | 2011-08-26 14:00 | 2011-08-26 16:00 |  | 0.31d |  |
| 39 |  | Codificar | 1.5h | 2011-08-26 14:00 | 2011-08-26 15:30 |  | 0.31d |  |
| 40 |  | Revisar | 30min | 2011-08-26 15:30 | 2011-08-26 16:00 | 39 | 0.31d |  |
| 41 | 1.6 | **Sexta Semana** | 0.88d | 2011-08-29 09:30 | 2011-08-29 17:30 | 32 | 0d |  |
| 42 | 1.6.1 | **RNF_03: Definição da UI para Aplicação** | 0.88d | 2011-08-29 09:30 | 2011-08-29 17:30 |  | 0d |  |
| 43 |  | Codificar | 7h | 2011-08-29 09:30 | 2011-08-29 17:30 |  | 0d |  |
| 44 | 1.7 | **Setima Semana** | 2.19d | 2011-08-29 17:30 | 2011-09-01 10:00 | 41 | 0d |  |
| 45 | 1.7.1 | **RNF_03: Definição da UI para Aplicação** | 0.5d | 2011-08-29 17:30 | 2011-08-30 13:30 |  | 1.69d |  |
| 46 |  | Revisar | 2h | 2011-08-29 17:30 | 2011-08-30 10:30 |  | 1.69d |  |
| 47 |  | Testar | 2h | 2011-08-30 10:30 | 2011-08-30 13:30 | 46 | 1.69d |  |
| 48 | 1.7.2 | **RF_07: Registro de rastreamento do usuário via GPS** | 2.19d | 2011-08-29 17:30 | 2011-09-01 10:00 |  | 0d |  |
| 49 |  | Criação da funcionalidade de iniciar registro | 4.5h | 2011-08-29 17:30 | 2011-08-30 14:00 |  | 0d |  |
| 50 |  | Criação da funcionalidade de finalizar registro | 4.5h | 2011-08-30 14:00 | 2011-08-31 09:30 | 49 | 0d |  |
| 51 |  | Acesso API para leitura dos dados | 4h | 2011-08-31 09:30 | 2011-08-31 14:30 | 50 | 0d |  |
| 52 |  | Guardar na base de dados | 4.5h | 2011-08-31 14:30 | 2011-09-01 10:00 | 51 | 0d |  |
| 53 | 1.8 | **Oitava Semana** | 0.88d | 2011-09-01 10:00 | 2011-09-01 18:00 | 44 | 0d |  |
| 54 | 1.8.1 | **RF_07: Registro de rastreamento do usuário via GPS** | 0.88d | 2011-09-01 10:00 | 2011-09-01 18:00 |  | 0d |  |
| 55 |  | Atualização das informações | 5h | 2011-09-01 10:00 | 2011-09-01 16:00 |  | 0d |  |
| 56 |  | Revisar | 2h | 2011-09-01 16:00 | 2011-09-01 18:00 | 55 | 0d |  |
| 57 | 1.8.2 | **RF_08: Fornecer Mapa do percurso percorrido** | 0.56d | 2011-09-01 10:00 | 2011-09-01 15:30 |  | 0.31d |  |
| 58 |  | Codificar | 3.5h | 2011-09-01 10:00 | 2011-09-01 14:30 |  | 0.31d |  |
| 59 |  | Revisar | 1h | 2011-09-01 14:30 | 2011-09-01 15:30 | 58 | 0.31d |  |
| 60 | 1.9 | **Nona Semana** | 0.38d | 2011-09-02 09:00 | 2011-09-02 12:00 | 53 | 0d |  |
| 61 | 1.9.1 | **RF_09: Disponibilizar para o usuário o desempenho no percurso rastreado** | 0.31d | 2011-09-02 09:00 | 2011-09-02 11:30 |  | 0.06d |  |
| 62 |  | Testar o requisito | 2.5h | 2011-09-02 09:00 | 2011-09-02 11:30 |  | 0.06d |  |
| 63 | 1.9.2 | **RF_07: Registro de rastreamento do usuário via GPS** | 0.38d | 2011-09-02 09:00 | 2011-09-02 12:00 |  | 0d |  |
| 64 |  | Testar | 3h | 2011-09-02 09:00 | 2011-09-02 12:00 |  | 0d |  |
| 65 | 1.10 | **Decima Semana** | 0.5d | 2011-09-02 13:00 | 2011-09-02 17:00 | 60 | 0d |  |
| 66 | 1.10.1 | **RF_08: Fornecer Mapa do percurso percorrido** | 0.5d | 2011-09-02 13:00 | 2011-09-02 17:00 |  | 0d |  |
| 67 |  | Testar | 4h | 2011-09-02 13:00 | 2011-09-02 17:00 |  | 0d |  |
| 68 | 1.10.2 | **RF_09: Disponibilizar para o usuário o desempenho no percurso rastreado** | 0.31d | 2011-09-02 13:00 | 2011-09-02 15:30 |  | 0.19d |  |
| 69 |  | Testar o requisito | 2.5h | 2011-09-02 13:00 | 2011-09-02 15:30 |  | 0.19d |  |

## Version 2 (saved 2011-10-07)

Note of the change: DroidMaster Cronograma de 07 à 14 de Outubro (Sprint 4)

Last finish 2011-09-02 → 2011-10-13 (+41d). Complete tasks 0 → 12.

Added:

| ID | Task | Duration | Start | Finish | Predecessors | Constraint | Resources |
| --- | --- | --- | --- | --- | --- | --- | --- |
| 3 | Realizar análise completa do requisito e materializar em documento | 16h | 2011-08-19 09:00 A | 2011-08-20 18:00 A |  | start no earlier than 2011-08-19 09:00 | Daniel |
| 9 | Levantar estrutura da base de dados | 4h | 2011-08-22 13:00 A | 2011-08-22 17:00 A | 8 |  | Gustavo |
| 13 | Desenvolver apresentação sobre evolução dos requisitos | 1d | 2011-08-24 17:00 A | 2011-08-25 17:00 A | 12 |  | Wlysses |
| 14 | Apresentar os requisitos 03 e 07 | 2h | 2011-08-26 09:00 A | 2011-08-26 11:00 A |  | start no earlier than 2011-08-26 09:00 |  |
| 21 | Desenvolver apresentação sobre evolução dos requisitos | 6h | 2011-10-12 14:00 | 2011-10-13 11:00 | 20 | start no earlier than 2011-09-08 09:00 |  |
| 22 | Apresentar os requisitos 07 e 08 | 6h | 2011-10-13 11:00 | 2011-10-13 18:00 | 21 | start no earlier than 2011-09-09 09:00 |  |

Removed: 2 Primeira Semana; 7 Segunda Semana; 13 Realizar análise do requisito; 17 Criar Diagrama de Classes, Caso de Uso e Diagrama Objeto Relacional; 18 Terceira Semana; 19 RNF_03: Definição da UI para Aplicação; 20 Criar Diagrama de Classes, Caso de Uso e Diagrama de Sequencia; 24 Quarta Semana; 25 RNF_03: Definição da UI para Aplicação; 26 Aprovação de Layout; 27 RF_07: Registro de rastreamento do usuário via GPS; 28 Criar Plano de Teste; 29 Criação da funcionalidade de iniciar registro; 30 Criação da funcionalidade de finalizar registro; 31 Acesso API para leitura dos dados; 32 Quinta Semana; 33 RF_08: Fornecer Mapa do percurso percorrido; 36 RF_07: Registro de rastreamento do usuário via GPS; 37 Criar Plano de Teste; 38 RF_09: Disponibilizar para o usuário o desempenho no percurso rastreado; 41 Sexta Semana; 42 RNF_03: Definição da UI para Aplicação; 43 Codificar; 44 Setima Semana; 45 RNF_03: Definição da UI para Aplicação; 46 Revisar; 48 RF_07: Registro de rastreamento do usuário via GPS; 49 Criação da funcionalidade de iniciar registro; 50 Criação da funcionalidade de finalizar registro; 51 Acesso API para leitura dos dados; 52 Guardar na base de dados; 53 Oitava Semana; 54 RF_07: Registro de rastreamento do usuário via GPS; 55 Atualização das informações; 56 Revisar; 57 RF_08: Fornecer Mapa do percurso percorrido; 58 Codificar; 59 Revisar; 60 Nona Semana; 61 RF_09: Disponibilizar para o usuário o desempenho no percurso rastreado; 63 RF_07: Registro de rastreamento do usuário via GPS; 64 Testar; 65 Decima Semana; 66 RF_08: Fornecer Mapa do percurso percorrido; 67 Testar; 68 RF_09: Disponibilizar para o usuário o desempenho no percurso rastreado; 69 Testar o requisito

Changed:

| ID | Task | Start | Finish | Duration | Complete | Total float | Predecessors | Other |
| --- | --- | --- | --- | --- | --- | --- | --- | --- |
| 1 | **Fitness Mobile - DroidMaster** | 2011-08-15 09:00 → 2011-08-19 09:00 A (+4d) | 2011-09-02 17:00 → 2011-10-13 18:00 (+41d) | 14.88d? → 41d | 0% → 76% |  |  |  |
| 2 | **RNF_03: Definição da UI para Aplicação** | 2011-08-15 09:00 → 2011-08-19 09:00 A (+4d) | 2011-08-16 15:00 → 2011-08-23 11:00 A (+7d) | 1.62d → 3.25d | 0% → 100% | 3.38d → none |  |  |
| 4 | Construir um prototipo | 2011-08-15 13:00 → 2011-08-20 09:00 A (+5d) | 2011-08-16 12:00 → 2011-08-20 18:00 A (+4d) |  | 0% → 100% | 3.38d → none | 16 → none | constraint none → start no earlier than 2011-08-20 09:00 |
| 5 | Apresentar o protótipo para a turma | 2011-08-16 13:00 → 2011-08-23 09:00 A (+7d) | 2011-08-16 15:00 → 2011-08-23 11:00 A (+7d) |  | 0% → 100% | 3.38d → none |  | was named Reunião para definir Layout; constraint none → start no earlier than 2011-08-23 09:00 |
| 6 | **RF_07: Registro de rastreamento do usuário via GPS** | 2011-08-22 09:00 → 2011-08-19 09:00 A (-3d) | 2011-08-22 16:00 → 2011-08-24 15:15 A (+2d) | 0.75d → 4.66d | 0% → 100% | 0d → none |  |  |
| 7 | Realizar análise completa do requisito e materializar em documento | 2011-08-22 09:00 → 2011-08-19 09:00 A (-3d) | 2011-08-22 12:00 → 2011-08-20 18:00 A (-2d) | 3h → 16h | 0% → 100% | 0d → none |  | was named Realizar análise do requisito; constraint start no earlier than 2011-08-22 09:00 → finish no earlier than 2011-08-20 18:00; resources Bruno; Daniel → Bruno; Rafael |
| 8 | Criar Diagrama de Classes, Caso de Uso e Diagrama Objeto Relacional | 2011-08-22 13:00 → 2011-08-22 09:00 A | 2011-08-22 15:00 → 2011-08-22 12:00 A | 2h → 3h | 0% → 100% | 0d → none |  | resources Bruno; Daniel → Bruno; Rafael |
| 10 | Codificar | 2011-08-23 11:00 → 2011-08-23 09:00 A | 2011-08-24 10:00 → 2011-08-23 15:15 A (-1d) | 7h → 5.25h | 0% → 100% | 0d → none | Criar Diagrama de Classes, Caso de Uso e Diagrama de Sequencia → 9 | constraint none → finish no earlier than 2011-08-23 14:00; resources Bruno → Thiago Abreu; Gustavo |
| 11 | Revisar | 2011-08-24 10:00 → 2011-08-23 10:15 A (-1d) | 2011-08-24 12:00 → 2011-08-23 15:15 A (-1d) | 2h → 4h | 0% → 100% | 0d → none | 10 → 10FF | resources Daniel → Rafael |
| 12 | Testar | 2011-08-24 13:00 → 2011-08-23 15:15 A (-1d) | 2011-08-24 15:00 → 2011-08-24 15:15 A | 2h → 1d | 0% → 100% | 0d → none |  |  |
| 15 | **RF_08: Fornecer Mapa do percurso percorrido** | 2011-08-16 15:00 → 2011-10-07 09:00 A (+52d) | 2011-08-16 17:00 → 2011-10-13 18:00 (+58d) | 0.25d → 5d | 0% → 46% | 3.88d → 0d |  |  |
| 16 | Realizar análise do requisito | 2011-08-15 09:00 → 2011-10-07 09:00 A (+53d) | 2011-08-15 12:00 → 2011-10-07 14:00 A (+53d) | 3h → 4h | 0% → 100% | 3.38d → none |  | constraint start no earlier than 2011-08-15 09:00 → start no earlier than 2011-10-07 09:00; resources Daniel → Bruno; Daniel; Rafael |
| 17 | Definir a interface de interação com o usuário, como o mapa será mostrado | 2011-08-22 15:00 → 2011-10-07 14:00 A (+46d) | 2011-08-22 16:00 → 2011-10-10 14:00 (+49d) | 1h → 1d | 0% → 75% | 0d → 1.5d | 8 → 16 | resources Bruno; Daniel → Bruno; Daniel; Rafael |
| 18 | Codificar | 2011-08-26 14:00 → 2011-10-10 14:00 A (+45d) | 2011-08-26 17:30 → 2011-10-12 14:00 (+47d) | 3.5h → 2d | 0% → 75% |  | none → 17 |  |
| 19 | Revisar | 2011-08-26 17:30 → 2011-10-12 09:00 (+47d) | 2011-08-29 09:30 → 2011-10-12 14:00 (+44d) | 1h → 4h |  |  | 18 → 18FF |  |
| 20 | Testar | 2011-08-30 10:30 → 2011-10-12 09:00 (+43d) | 2011-08-30 13:30 → 2011-10-12 14:00 (+43d) | 2h → 4h |  | 1.69d → 0d | Revisar → 19FF |  |
| 23 | **RF_09: Disponibilizar para o usuário o desempenho no percurso rastreado** | 2011-08-16 15:00 → 2011-10-12 14:00 (+57d) | 2011-08-16 16:00 → 2011-10-13 10:30 (+58d) | 0.12d → 0.69d |  | 4d → 0.81d | none → 20 |  |
| 24 | Analisar o requisito | 2011-08-16 15:00 → 2011-10-12 14:00 (+57d) | 2011-08-16 15:30 → 2011-10-12 14:30 (+57d) |  |  | 4d → 0.81d |  |  |
| 25 | Criar Diagrama de Classes, Caso de Uso e Diagrama Objeto Relacional | 2011-08-16 16:30 → 2011-10-12 14:30 (+57d) | 2011-08-16 17:00 → 2011-10-12 15:00 (+57d) |  |  | 3.88d → 0.81d | Realizar análise do requisito → 24 | resources Rafael; Wlysses → Bruno; Daniel |
| 26 | Codificar | 2011-08-26 14:00 → 2011-10-12 15:00 (+47d) | 2011-08-26 15:30 → 2011-10-12 16:30 (+47d) |  |  | 0.31d → 0.81d | none → 25 |  |
| 27 | Revisar | 2011-08-26 15:30 → 2011-10-12 16:30 (+47d) | 2011-08-26 16:00 → 2011-10-12 17:00 (+47d) |  |  | 0.31d → 0.81d |  |  |
| 28 | Testar o requisito | 2011-09-02 09:00 → 2011-10-12 17:00 (+40d) | 2011-09-02 11:30 → 2011-10-13 10:30 (+41d) |  |  | 0.06d → 0.81d | none → 27 |  |
