# Desenvolvimento Cronograma - grafico de dependencia final

How a schedule from MS Project changed from version to version. A marks actual dates.

## Version 1 (saved 2011-05-05)

Note of the change: Alterações da equipe Jedi

| ID | WBS | Task | Duration | Start | Finish | Predecessors | Total float | Constraint |
| --- | --- | --- | --- | --- | --- | --- | --- | --- |
| 1 | 1 | **Projeto Fitness Mobile** | 106.75d | 2011-04-11 09:00 | 2011-09-06 16:00 |  | 0d |  |
| 2 | 1.1 | **RNF_03: Definição da UI para Aplicação** | 2.25d | 2011-08-15 09:00 | 2011-08-17 11:00 |  | 1.75d |  |
| 3 |  | Realizar análise do requisito | 3h | 2011-08-15 09:00 | 2011-08-15 12:00 |  | 1.75d | start no earlier than 2011-08-15 09:00 |
| 4 |  | Criar Diagrama de Classes, Caso de Uso e Diagrama de Sequencia | 4h | 2011-08-15 13:00 | 2011-08-15 17:00 | 3 | 1.75d |  |
| 5 |  | Codificar | 7h | 2011-08-15 17:00 | 2011-08-16 16:00 | 4 | 1.75d |  |
| 6 |  | Revisar | 2h | 2011-08-16 16:00 | 2011-08-16 18:00 | 5 | 1.75d |  |
| 7 |  | Testar | 2h | 2011-08-17 09:00 | 2011-08-17 11:00 | 6 | 1.75d |  |
| 8 | 1.2 | **RNF_06: Configuração do ambiente do projeto** | 1d | 2011-04-11 09:00 | 2011-04-11 18:00 |  | 93d |  |
| 9 |  | Analisar a necessidade do software | 3h | 2011-04-11 09:00 | 2011-04-11 12:00 |  | 93d |  |
| 10 |  | Instalar e configurar o ambiente | 5h | 2011-04-11 13:00 | 2011-04-11 18:00 | 9 | 93d |  |
| 11 | 1.3 | **RF_11: Escolha do modo de visualização** | 0.75d | 2011-08-17 11:00 | 2011-08-17 18:00 | 2 | 12.75d |  |
| 12 |  | Realizar análise do requisito | 1h | 2011-08-17 11:00 | 2011-08-17 12:00 |  | 12.75d |  |
| 13 |  | Criar Diagrama de Classes, Caso de Uso e Diagrama Objeto Relacional | 30min | 2011-08-17 13:00 | 2011-08-17 13:30 | 12 | 12.75d |  |
| 14 |  | Definir a interface de interação com o usuário | 1h | 2011-08-17 13:30 | 2011-08-17 14:30 | 13 | 12.75d |  |
| 15 |  | Codificar | 2h | 2011-08-17 14:30 | 2011-08-17 16:30 | 14 | 12.75d |  |
| 16 |  | Revisar | 30min | 2011-08-17 16:30 | 2011-08-17 17:00 | 15 | 12.75d |  |
| 17 |  | Testar | 1h | 2011-08-17 17:00 | 2011-08-17 18:00 | 16 | 12.75d |  |
| 18 | 1.4 | **RF_01: Manter dados do Usuário** | 1d | 2011-08-17 11:00 | 2011-08-18 11:00 | 2, 8 | 5d |  |
| 19 |  | Realizar análise do requisito | 1h | 2011-08-17 11:00 | 2011-08-17 12:00 |  | 5d |  |
| 20 |  | Criar Diagrama de Classes, Caso de Uso e Diagrama Objeto Relacional | 1h | 2011-08-17 13:00 | 2011-08-17 14:00 | 19 | 5d |  |
| 21 |  | Criação da camada de acesso à base de dados | 2h | 2011-08-17 14:00 | 2011-08-17 16:00 | 20 | 5d |  |
| 22 |  | Codificação do CRUD | 2h | 2011-08-17 16:00 | 2011-08-17 18:00 | 21 | 5d |  |
| 23 |  | Revisar | 1h | 2011-08-18 09:00 | 2011-08-18 10:00 | 22 | 5d |  |
| 24 |  | Testar | 1h | 2011-08-18 10:00 | 2011-08-18 11:00 | 23 | 5d |  |
| 25 | 1.5 | **RF_02: Manter exercícios** | 1d | 2011-08-17 11:00 | 2011-08-18 11:00 | 2, 8 | 1.75d |  |
| 26 |  | Realizar análise do requisito | 1h | 2011-08-17 11:00 | 2011-08-17 12:00 |  | 1.75d | start no earlier than 2011-08-15 09:00 |
| 27 |  | Criar Diagrama de Classes, Caso de Uso e Diagrama Objeto Relacional | 1h | 2011-08-17 13:00 | 2011-08-17 14:00 | 26 | 1.75d |  |
| 28 |  | Levantar estrutura da base de dados | 2h | 2011-08-17 14:00 | 2011-08-17 16:00 | 27 | 1.75d |  |
| 29 |  | Codificar | 2h | 2011-08-17 16:00 | 2011-08-17 18:00 | 28 | 1.75d |  |
| 30 |  | Revisar | 1h | 2011-08-18 09:00 | 2011-08-18 10:00 | 29 | 1.75d |  |
| 31 |  | Testar | 1h | 2011-08-18 10:00 | 2011-08-18 11:00 | 30 | 1.75d |  |
| 32 | 1.6 | **RF_03: Manter programa de exercícios** | 1d | 2011-08-18 11:00 | 2011-08-19 11:00 | 31 | 3.5d |  |
| 33 |  | Realizar análise do requisito | 1h | 2011-08-18 11:00 | 2011-08-18 12:00 |  | 3.5d |  |
| 34 |  | Criar Diagrama de Classes, Caso de Uso e Diagrama Objeto Relacional | 1h | 2011-08-18 13:00 | 2011-08-18 14:00 | 33 | 3.5d |  |
| 35 |  | Levantar estrutura da base de dados | 2h | 2011-08-18 14:00 | 2011-08-18 16:00 | 34 | 3.5d |  |
| 36 |  | Codificar | 2h | 2011-08-18 16:00 | 2011-08-18 18:00 | 35 | 3.5d |  |
| 37 |  | Revisar | 1h | 2011-08-19 09:00 | 2011-08-19 10:00 | 36 | 3.5d |  |
| 38 |  | Testar | 1h | 2011-08-19 10:00 | 2011-08-19 11:00 | 37 | 3.5d |  |
| 39 | 1.7 | **RF_07: Registro de rastreamento do usuário via GPS** | 7.5d | 2011-08-22 09:00 | 2011-08-31 14:00 | 25 | 0d |  |
| 40 |  | Realizar análise do requisito | 6h | 2011-08-22 09:00 | 2011-08-22 16:00 |  | 0d | start no earlier than 2011-08-22 09:00 |
| 41 |  | Criar Diagrama de Classes, Caso de Uso e Diagrama Objeto Relacional | 4h | 2011-08-22 16:00 | 2011-08-23 11:00 | 40 | 0d |  |
| 42 |  | Criação da funcionalidade de iniciar registro | 9h | 2011-08-23 11:00 | 2011-08-24 12:00 | 41 | 0d |  |
| 43 |  | Criação da funcionalidade de finalizar registro | 9h | 2011-08-24 13:00 | 2011-08-25 14:00 | 42 | 0d |  |
| 44 |  | Acesso API para leitura dos dados | 8h | 2011-08-25 14:00 | 2011-08-26 14:00 | 43 | 0d |  |
| 45 |  | Guardar na base de dados | 9h | 2011-08-26 14:00 | 2011-08-29 15:00 | 44 | 0d |  |
| 46 |  | Atualização das informações | 10h | 2011-08-29 15:00 | 2011-08-30 17:00 | 45 | 0d |  |
| 47 |  | Revisar | 2h | 2011-08-30 17:00 | 2011-08-31 10:00 | 46 | 0d |  |
| 48 |  | Testar | 3h | 2011-08-31 10:00 | 2011-08-31 14:00 | 47 | 0d |  |
| 49 | 1.8 | **RF_04: Agenda de exercícios executados(Baixa de exercicios)** | 0.5d | 2011-08-19 11:00 | 2011-08-19 16:00 | 32 | 3.5d |  |
| 50 |  | Realizar análise do requisito | 30min | 2011-08-19 11:00 | 2011-08-19 11:30 |  | 3.5d |  |
| 51 |  | Criar Diagrama de Classes, Caso de Uso e Diagrama Objeto Relacional | 30min | 2011-08-19 11:30 | 2011-08-19 12:00 | 50 | 3.5d |  |
| 52 |  | Modelar um Banco de Dados para manter o cadastro dos exercicios do cliente (CRUD) | 1h | 2011-08-19 13:00 | 2011-08-19 14:00 | 51 | 3.5d |  |
| 53 |  | Codificação | 1h | 2011-08-19 14:00 | 2011-08-19 15:00 | 52 | 3.5d |  |
| 54 |  | Revisão | 30min | 2011-08-19 15:00 | 2011-08-19 15:30 | 53 | 3.5d |  |
| 55 |  | Fazer os testes | 30min | 2011-08-19 15:30 | 2011-08-19 16:00 | 54 | 3.5d |  |
| 56 | 1.9 | **RF_06: Mostrar o desenvolvimento do usuário por periodo** | 7.5d | 2011-08-19 16:00 | 2011-08-31 11:00 | 18, 55 | 3.5d |  |
| 57 |  | Analisar o requisito | 10h | 2011-08-19 16:00 | 2011-08-22 18:00 |  | 3.5d |  |
| 58 |  | Criar Diagrama de Classes, Caso de Uso e Diagrama Objeto Relacional | 6h | 2011-08-23 09:00 | 2011-08-23 16:00 | 57 | 3.5d |  |
| 59 |  | Definir a interface de interação com o usuário | 14h | 2011-08-23 16:00 | 2011-08-25 14:00 | 58 | 3.5d |  |
| 60 |  | Codificar | 20h | 2011-08-25 14:00 | 2011-08-29 18:00 | 59 | 3.5d |  |
| 61 |  | Revisar | 4h | 2011-08-30 09:00 | 2011-08-30 14:00 | 60 | 3.5d |  |
| 62 |  | Testar | 6h | 2011-08-30 14:00 | 2011-08-31 11:00 | 61 | 3.5d |  |
| 63 | 1.10 | **RF_05: Consultar estatísticas comparativas do programa agendado e das atividades executadas** | 7.5d | 2011-08-19 16:00 | 2011-08-31 11:00 | 49 | 3.5d |  |
| 64 |  | Realizar análise do requisito | 15h | 2011-08-19 16:00 | 2011-08-23 15:00 |  | 3.5d |  |
| 65 |  | Criar Diagrama de Classes, Caso de Uso e Diagrama Objeto Relacional | 9h | 2011-08-23 15:00 | 2011-08-24 16:00 | 64 | 3.5d |  |
| 66 |  | Codificar | 22h | 2011-08-24 16:00 | 2011-08-29 14:00 | 65 | 3.5d |  |
| 67 |  | Revisar | 5h | 2011-08-29 14:00 | 2011-08-30 10:00 | 66 | 3.5d |  |
| 68 |  | Testar o requisito | 9h | 2011-08-30 10:00 | 2011-08-31 11:00 | 67 | 3.5d |  |
| 69 | 1.11 | **RF_10: Controle das atividades durante o exercício** | 0.75d | 2011-08-22 09:00 | 2011-08-22 16:00 | 49 | 10d |  |
| 70 |  | Realizar análise do requisito | 1h | 2011-08-22 09:00 | 2011-08-22 10:00 |  | 10d | start no earlier than 2011-08-22 09:00 |

| ID | WBS | Task | Duration | Start | Finish | Predecessors | Total float |
| --- | --- | --- | --- | --- | --- | --- | --- |
| 71 |  | Criar Diagrama de Classes, Caso de Uso e Diagrama Objeto Relacional | 30min | 2011-08-22 10:00 | 2011-08-22 10:30 | 70 | 10d |
| 72 |  | Definir a interface de interação com o usuário | 30min | 2011-08-22 10:30 | 2011-08-22 11:00 | 71 | 10d |
| 73 |  | Codificar | 2h | 2011-08-22 11:00 | 2011-08-22 14:00 | 72 | 10d |
| 74 |  | Revisar | 30min | 2011-08-22 14:00 | 2011-08-22 14:30 | 73 | 10d |
| 75 |  | Testar | 1.5h | 2011-08-22 14:30 | 2011-08-22 16:00 | 74 | 10d |
| 76 | 1.12 | **RF_08: Fornecer Mapa do percurso percorrido** | 2.25d | 2011-08-31 14:00 | 2011-09-02 16:00 | 39 | 0d |
| 77 |  | Realizar análise do requisito | 3h | 2011-08-31 14:00 | 2011-08-31 17:00 |  | 0d |
| 78 |  | Definir a interface de interação com o usuário, como o mapa será mostrado | 2h | 2011-08-31 17:00 | 2011-09-01 10:00 | 77 | 0d |
| 79 |  | Criar Diagrama de Classes, Caso de Uso e Diagrama Objeto Relacional | 1h | 2011-09-01 10:00 | 2011-09-01 11:00 | 78 | 0d |
| 80 |  | Codificar | 7h | 2011-09-01 11:00 | 2011-09-02 10:00 | 79 | 0d |
| 81 |  | Revisar | 1h | 2011-09-02 10:00 | 2011-09-02 11:00 | 80 | 0d |
| 82 |  | Testar | 4h | 2011-09-02 11:00 | 2011-09-02 16:00 | 81 | 0d |
| 83 | 1.13 | **RF_09: Disponibilizar para o usuário o desempenho no percurso rastreado** | 1d | 2011-09-02 16:00 | 2011-09-05 16:00 | 82 | 0d |
| 84 |  | Analisar o requisito | 1h | 2011-09-02 16:00 | 2011-09-02 17:00 |  | 0d |
| 85 |  | Criar Diagrama de Classes, Caso de Uso e Diagrama Objeto Relacional | 1h | 2011-09-02 17:00 | 2011-09-02 18:00 | 84 | 0d |
| 86 |  | Codificar | 3h | 2011-09-05 09:00 | 2011-09-05 12:00 | 85 | 0d |
| 87 |  | Revisar | 30min | 2011-09-05 13:00 | 2011-09-05 13:30 | 86 | 0d |
| 88 |  | Testar o requisito | 2.5h | 2011-09-05 13:30 | 2011-09-05 16:00 | 87 | 0d |
| 89 | 1.14 | **Final do Projeto** | 1d | 2011-09-05 16:00 | 2011-09-06 16:00 | 2, 8, 11, 18, 25, 32, 39, 49, 56, 63, 69, 76, 88 | 0d |
| 90 | 1.14.1 | **RF_12: Exportar Informações** | 1d | 2011-09-05 16:00 | 2011-09-06 16:00 |  | 0d |
| 91 |  | Realizar análise do requisito | 1.5h | 2011-09-05 16:00 | 2011-09-05 17:30 |  | 0d |
| 92 |  | Criar Diagrama de Classes, Caso de Uso e Diagrama de Sequencia | 1h | 2011-09-05 17:30 | 2011-09-06 09:30 | 91 | 0d |
| 93 |  | Codificar | 3h | 2011-09-06 09:30 | 2011-09-06 13:30 | 92 | 0d |
| 94 |  | Revisar | 30min | 2011-09-06 13:30 | 2011-09-06 14:00 | 93 | 0d |
| 95 |  | Testar | 2h | 2011-09-06 14:00 | 2011-09-06 16:00 | 94 | 0d |
| 96 | 1.14.2 | **RF_13: Configuração da Aplicação** | 1d | 2011-09-05 16:00 | 2011-09-06 16:00 |  | 0d |
| 97 |  | Realizar análise do requisito | 1.5h | 2011-09-05 16:00 | 2011-09-05 17:30 |  | 0d |
| 98 |  | Criar Diagrama de Classes, Caso de Uso e Diagrama de Sequencia | 1h | 2011-09-05 17:30 | 2011-09-06 09:30 | 97 | 0d |
| 99 |  | Codificar | 3h | 2011-09-06 09:30 | 2011-09-06 13:30 | 98 | 0d |
| 100 |  | Revisar | 30min | 2011-09-06 13:30 | 2011-09-06 14:00 | 99 | 0d |
| 101 |  | Testar | 2h | 2011-09-06 14:00 | 2011-09-06 16:00 | 100 | 0d |

## Version 2 (saved 2011-06-06)

Note of the change: Atualização do cronograma com as atividades para gerenciar riscos grupo DroidMaster

Last finish 2011-09-06 → 2011-09-01 (-5d).

Added:

| ID | Task | Duration | Start | Finish | Predecessors | Resources |
| --- | --- | --- | --- | --- | --- | --- |
| 2 | Resolver problemas com a IDE | 1h | 2011-04-11 09:00 | 2011-04-11 10:00 |  | Thiago Abreu |
| 4 | Reunião para definir Layout | 2h | 2011-04-11 09:00 | 2011-04-11 11:00 |  | Bruno |
| 44 | Criar Plano de Teste | 2h | 2011-08-22 15:00 | 2011-08-22 17:00 | 43 | Wlysses |

Changed:

| ID | Task | Start | Finish | Duration | Total float | Predecessors | Other |
| --- | --- | --- | --- | --- | --- | --- | --- |
| 1 | **Projeto Fitness Mobile** |  | 2011-09-06 16:00 → 2011-09-01 11:00 (-5d) | 106.75d → 103.25d |  |  |  |
| 3 | **RNF_03: Definição da UI para Aplicação** | 2011-08-15 09:00 → 2011-04-11 09:00 (-126d) |  | 2.25d → 92.25d | 1.75d → 0d |  |  |
| 5 | Realizar análise do requisito |  |  |  | 1.75d → 0d | none → 4 |  |
| 41 | **RF_07: Registro de rastreamento do usuário via GPS** |  | 2011-08-31 14:00 → 2011-08-26 11:30 (-5d) | 7.5d → 4.31d | 0d → 0.81d |  |  |
| 42 | Realizar análise do requisito |  | 2011-08-22 16:00 → 2011-08-22 12:00 | 6h → 3h | 0d → 0.81d |  | resources Bruno e Daniel → Bruno; Daniel |
| 43 | Criar Diagrama de Classes, Caso de Uso e Diagrama Objeto Relacional | 2011-08-22 16:00 → 2011-08-22 13:00 | 2011-08-23 11:00 → 2011-08-22 15:00 (-1d) | 4h → 2h | 0d → 0.81d |  | resources Bruno e Daniel → Bruno; Daniel |
| 45 | Criação da funcionalidade de iniciar registro | 2011-08-23 11:00 → 2011-08-22 17:00 (-1d) | 2011-08-24 12:00 → 2011-08-23 13:30 (-1d) | 9h → 4.5h | 0d → 0.81d | 43 → 44 | resources Thiago e Gustavo → Thiago Abreu; Gustavo |
| 46 | Criação da funcionalidade de finalizar registro | 2011-08-24 13:00 → 2011-08-23 13:30 (-1d) | 2011-08-25 14:00 → 2011-08-23 18:00 (-2d) | 9h → 4.5h | 0d → 0.81d |  | resources Thiago e Gustavo → Thiago Abreu; Gustavo |
| 47 | Acesso API para leitura dos dados | 2011-08-25 14:00 → 2011-08-24 09:00 (-1d) | 2011-08-26 14:00 → 2011-08-24 14:00 (-2d) | 8h → 4h | 0d → 0.81d |  | resources Thiago e Gustavo → Thiago Abreu; Gustavo |
| 48 | Guardar na base de dados | 2011-08-26 14:00 → 2011-08-24 14:00 (-2d) | 2011-08-29 15:00 → 2011-08-25 09:30 (-4d) | 9h → 4.5h | 0d → 0.81d |  | resources Thiago e Gustavo → Thiago Abreu; Gustavo |
| 49 | Atualização das informações | 2011-08-29 15:00 → 2011-08-25 09:30 (-4d) | 2011-08-30 17:00 → 2011-08-25 15:30 (-5d) | 10h → 5h | 0d → 0.81d |  | resources Thiago e Gustavo → Thiago Abreu; Gustavo |
| 50 | Revisar | 2011-08-30 17:00 → 2011-08-25 15:30 (-5d) | 2011-08-31 10:00 → 2011-08-25 17:30 (-6d) |  | 0d → 0.81d |  |  |
| 51 | Testar | 2011-08-31 10:00 → 2011-08-25 17:30 (-6d) | 2011-08-31 14:00 → 2011-08-26 11:30 (-5d) |  | 0d → 0.81d |  |  |
| 72 | **RF_10: Controle das atividades durante o exercício** | 2011-08-22 09:00 → 2011-08-19 16:00 (-3d) | 2011-08-22 16:00 → 2011-08-22 14:00 |  | 10d → 6.75d |  |  |
| 73 | Realizar análise do requisito | 2011-08-22 09:00 → 2011-08-19 16:00 (-3d) | 2011-08-22 10:00 → 2011-08-19 17:00 (-3d) |  | 10d → 6.75d |  | constraint start no earlier than 2011-08-22 09:00 → none |
| 74 | Criar Diagrama de Classes, Caso de Uso e Diagrama Objeto Relacional | 2011-08-22 10:00 → 2011-08-19 17:00 (-3d) | 2011-08-22 10:30 → 2011-08-19 17:30 (-3d) |  | 10d → 6.75d |  |  |
| 75 | Definir a interface de interação com o usuário | 2011-08-22 10:30 → 2011-08-19 17:30 (-3d) | 2011-08-22 11:00 → 2011-08-19 18:00 (-3d) |  | 10d → 6.75d |  |  |
| 76 | Codificar | 2011-08-22 11:00 → 2011-08-22 09:00 | 2011-08-22 14:00 → 2011-08-22 11:00 |  | 10d → 6.75d |  |  |
| 77 | Revisar | 2011-08-22 14:00 → 2011-08-22 11:00 | 2011-08-22 14:30 → 2011-08-22 11:30 |  | 10d → 6.75d |  |  |
| 78 | Testar | 2011-08-22 14:30 → 2011-08-22 11:30 | 2011-08-22 16:00 → 2011-08-22 14:00 |  | 10d → 6.75d |  |  |
| 79 | **RF_08: Fornecer Mapa do percurso percorrido** | 2011-08-31 14:00 → 2011-08-26 11:30 (-5d) | 2011-09-02 16:00 → 2011-08-29 16:00 (-4d) | 2.25d → 1.44d | 0d → 0.81d |  |  |
| 80 | Realizar análise do requisito | 2011-08-31 14:00 → 2011-08-26 11:30 (-5d) | 2011-08-31 17:00 → 2011-08-26 14:00 (-5d) | 3h → 1.5h | 0d → 0.81d |  | resources Bruno e Daniel → Bruno; Daniel |
| 81 | Definir a interface de interação com o usuário, como o mapa será mostrado | 2011-08-31 17:00 → 2011-08-26 14:00 (-5d) | 2011-09-01 10:00 → 2011-08-26 15:00 (-6d) | 2h → 1h | 0d → 0.81d |  | resources Bruno e Daniel → Bruno; Daniel |
| 82 | Criar Diagrama de Classes, Caso de Uso e Diagrama Objeto Relacional | 2011-09-01 10:00 → 2011-08-26 15:00 (-6d) | 2011-09-01 11:00 → 2011-08-26 15:30 (-6d) | 1h → 0.5h | 0d → 0.81d |  | resources Bruno e Daniel → Bruno; Daniel |
| 83 | Codificar | 2011-09-01 11:00 → 2011-08-26 15:30 (-6d) | 2011-09-02 10:00 → 2011-08-29 10:00 (-4d) | 7h → 3.5h | 0d → 0.81d |  | resources Thiago e Gustavo → Thiago Abreu; Gustavo |
| 84 | Revisar | 2011-09-02 10:00 → 2011-08-29 10:00 (-4d) | 2011-09-02 11:00 → 2011-08-29 11:00 (-4d) |  | 0d → 0.81d |  |  |
| 85 | Testar | 2011-09-02 11:00 → 2011-08-29 11:00 (-4d) | 2011-09-02 16:00 → 2011-08-29 16:00 (-4d) |  | 0d → 0.81d |  |  |
| 86 | **RF_09: Disponibilizar para o usuário o desempenho no percurso rastreado** | 2011-09-02 16:00 → 2011-08-29 16:00 (-4d) | 2011-09-05 16:00 → 2011-08-30 13:30 (-6d) | 1d → 0.69d | 0d → 0.81d |  |  |
| 87 | Analisar o requisito | 2011-09-02 16:00 → 2011-08-29 16:00 (-4d) | 2011-09-02 17:00 → 2011-08-29 16:30 (-4d) | 1h → 0.5h | 0d → 0.81d |  | resources Bruno e Daniel → Bruno; Daniel |
| 88 | Criar Diagrama de Classes, Caso de Uso e Diagrama Objeto Relacional | 2011-09-02 17:00 → 2011-08-29 16:30 (-4d) | 2011-09-02 18:00 → 2011-08-29 17:00 (-4d) | 1h → 0.5h | 0d → 0.81d |  | resources Bruno e Daniel → Bruno; Daniel |
| 89 | Codificar | 2011-09-05 09:00 → 2011-08-29 17:00 (-7d) | 2011-09-05 12:00 → 2011-08-30 09:30 (-6d) | 3h → 1.5h | 0d → 0.81d |  | resources Thiago e Gustavo → Thiago Abreu; Gustavo |
| 90 | Revisar | 2011-09-05 13:00 → 2011-08-30 09:30 (-6d) | 2011-09-05 13:30 → 2011-08-30 10:00 (-6d) |  | 0d → 0.81d |  |  |
| 91 | Testar o requisito | 2011-09-05 13:30 → 2011-08-30 10:00 (-6d) | 2011-09-05 16:00 → 2011-08-30 13:30 (-6d) |  | 0d → 0.81d |  |  |
| 92 | **Final do Projeto** | 2011-09-05 16:00 → 2011-08-31 11:00 (-5d) | 2011-09-06 16:00 → 2011-09-01 11:00 (-5d) |  |  |  |  |
| 93 | **RF_12: Exportar Informações** | 2011-09-05 16:00 → 2011-08-31 11:00 (-5d) | 2011-09-06 16:00 → 2011-09-01 11:00 (-5d) |  |  |  |  |
| 94 | Realizar análise do requisito | 2011-09-05 16:00 → 2011-08-31 11:00 (-5d) | 2011-09-05 17:30 → 2011-08-31 13:30 (-5d) |  |  |  |  |
| 95 | Criar Diagrama de Classes, Caso de Uso e Diagrama de Sequencia | 2011-09-05 17:30 → 2011-08-31 13:30 (-5d) | 2011-09-06 09:30 → 2011-08-31 14:30 (-6d) |  |  |  |  |
| 96 | Codificar | 2011-09-06 09:30 → 2011-08-31 14:30 (-6d) | 2011-09-06 13:30 → 2011-08-31 17:30 (-6d) |  |  |  |  |
| 97 | Revisar | 2011-09-06 13:30 → 2011-08-31 17:30 (-6d) | 2011-09-06 14:00 → 2011-08-31 18:00 (-6d) |  |  |  |  |
| 98 | Testar | 2011-09-06 14:00 → 2011-09-01 09:00 (-5d) | 2011-09-06 16:00 → 2011-09-01 11:00 (-5d) |  |  |  |  |
| 99 | **RF_13: Configuração da Aplicação** | 2011-09-05 16:00 → 2011-08-31 11:00 (-5d) | 2011-09-06 16:00 → 2011-09-01 11:00 (-5d) |  |  |  |  |
| 100 | Realizar análise do requisito | 2011-09-05 16:00 → 2011-08-31 11:00 (-5d) | 2011-09-05 17:30 → 2011-08-31 13:30 (-5d) |  |  |  |  |
| 101 | Criar Diagrama de Classes, Caso de Uso e Diagrama de Sequencia | 2011-09-05 17:30 → 2011-08-31 13:30 (-5d) | 2011-09-06 09:30 → 2011-08-31 14:30 (-6d) |  |  |  |  |
| 102 | Codificar | 2011-09-06 09:30 → 2011-08-31 14:30 (-6d) | 2011-09-06 13:30 → 2011-08-31 17:30 (-6d) |  |  |  |  |
| 103 | Revisar | 2011-09-06 13:30 → 2011-08-31 17:30 (-6d) | 2011-09-06 14:00 → 2011-08-31 18:00 (-6d) |  |  |  |  |
| 104 | Testar | 2011-09-06 14:00 → 2011-09-01 09:00 (-5d) | 2011-09-06 16:00 → 2011-09-01 11:00 (-5d) |  |  |  |  |

## Version 3 (saved 2011-06-06)

Note of the change: atualização nas atividades de gerenciamento de risco do grupo DroidMaster

Last finish stays 2011-09-01.

Added:

| ID | Task | Duration | Start | Finish |
| --- | --- | --- | --- | --- |
| 10 | Aprovação de Layout | 8h? | 2011-04-11 09:00 | 2011-04-11 18:00 |

Changed:

| ID | Task | Duration | Other |
| --- | --- | --- | --- |
| 1 | **Projeto Fitness Mobile** | 103.25d → 103.25d? |  |
| 2 | Monitorar problemas com a IDE |  | was named Resolver problemas com a IDE |
| 3 | **RNF_03: Definição da UI para Aplicação** | 92.25d → 92.25d? |  |
