# Fitness Mobile

How a schedule from MS Project changed from version to version. A marks actual dates.

## Version 1 (saved 2011-10-20)

Note of the change: inclusão do cronograna do requisito RF_09

| ID | WBS | Task | Duration | Start | Finish | Predecessors | Complete | Total float | Constraint |
| --- | --- | --- | --- | --- | --- | --- | --- | --- | --- |
| 1 | 1 | **Fitness Mobile - DroidMaster** | 46.5d | 2011-08-19 09:00 A | 2011-10-21 14:00 |  | 68% | 0d |  |
| 2 | 1.1 | **RNF_03: Definição da UI para Aplicação** | 3.25d | 2011-08-19 09:00 A | 2011-08-23 11:00 A |  | 100% |  |  |
| 3 |  | Realizar análise completa do requisito e materializar em documento | 16h | 2011-08-19 09:00 A | 2011-08-20 18:00 A |  | 100% |  | start no earlier than 2011-08-19 09:00 |
| 4 |  | Construir um prototipo | 8h | 2011-08-20 09:00 A | 2011-08-20 18:00 A |  | 100% |  | start no earlier than 2011-08-20 09:00 |
| 5 |  | Apresentar o protótipo para a turma | 2h | 2011-08-23 09:00 A | 2011-08-23 11:00 A | 4 | 100% |  | start no earlier than 2011-08-23 09:00 |
| 6 | 1.2 | **RF_07: Registro de rastreamento do usuário via GPS** | 4.66d | 2011-08-19 09:00 A | 2011-08-24 15:15 |  | 61% | 41.84d |  |
| 7 |  | Realizar análise completa do requisito e materializar em documento | 16h | 2011-08-19 09:00 A | 2011-08-20 18:00 A |  | 100% |  | finish no earlier than 2011-08-20 18:00 |
| 8 |  | Criar Diagrama de Classes, Caso de Uso e Diagrama Objeto Relacional | 3h | 2011-08-22 09:00 A | 2011-08-22 12:00 A | 7 | 100% |  |  |
| 9 |  | Levantar estrutura da base de dados | 4h | 2011-08-22 13:00 | 2011-08-22 17:00 | 8 |  | 13.88d |  |
| 10 |  | Codificar | 5.25h | 2011-08-23 09:00 A | 2011-08-23 15:15 A | 9 | 100% |  | finish no earlier than 2011-08-23 14:00 |
| 11 |  | Revisar | 4h | 2011-08-23 10:15 A | 2011-08-23 15:15 | 10FF | 10% | 41.84d |  |
| 12 |  | Testar | 1d | 2011-08-23 15:15 | 2011-08-24 15:15 | 11 |  | 12.09d |  |
| 13 |  | Desenvolver apresentação sobre evolução dos requisitos | 1d | 2011-08-24 17:00 A | 2011-08-25 17:00 A | 12 | 100% |  |  |
| 14 |  | Apresentar os requisitos 03 e 07 | 2h | 2011-08-26 09:00 A | 2011-08-26 11:00 A |  | 100% |  | start no earlier than 2011-08-26 09:00 |
| 15 | 1.5 | **RF_08: Fornecer Mapa do percurso percorrido** | 5.75d | 2011-09-02 09:00 A | 2011-09-09 16:00 A |  | 100% |  |  |
| 16 |  | Realizar análise do requisito | 4h | 2011-09-02 09:00 A | 2011-09-02 14:00 A |  | 100% |  | start no earlier than 2011-09-02 09:00 |
| 17 |  | Definir a interface de interação com o usuário, como o mapa será mostrado | 2d | 2011-09-02 14:00 A | 2011-09-06 14:00 A | 16 | 100% |  |  |
| 18 |  | Criar Diagrama de Classes, Caso de Uso e Diagrama Objeto Relacional | 2d | 2011-09-02 09:00 A | 2011-09-05 18:00 A |  | 100% |  | start no earlier than 2011-09-02 09:00 |
| 19 |  | Codificar | 3d | 2011-09-06 09:00 A | 2011-09-08 18:00 A | 18 | 100% |  |  |
| 20 |  | Revisar | 4h | 2011-09-08 14:00 A | 2011-09-08 18:00 A | 19FF | 100% |  |  |
| 21 |  | Testar | 4h | 2011-09-08 14:00 A | 2011-09-08 18:00 A | 20FF | 100% |  |  |
| 22 |  | Desenvolver apresentação sobre evolução dos requisitos | 6h | 2011-09-08 09:00 A | 2011-09-08 16:00 A |  | 100% |  | start no earlier than 2011-09-08 09:00 |
| 23 |  | Apresentar os requisitos 07 e 08 | 6h | 2011-09-09 09:00 A | 2011-09-09 16:00 A |  | 100% |  | start no earlier than 2011-09-09 09:00 |
| 24 | 1.6 | **RF_09: Disponibilizar para o usuário o desempenho no percurso rastreado** | 4.5d | 2011-10-17 09:00 | 2011-10-21 14:00 | 21 |  | 0d |  |
| 25 |  | Realizar análise do requisito | 1d | 2011-10-17 09:00 | 2011-10-17 18:00 |  |  | 2.5d | start no earlier than 2011-10-17 09:00 |
| 26 |  | Definir a interface de interação com o usuário, como o mapa será mostrado | 1d | 2011-10-18 09:00 | 2011-10-18 18:00 | 25 |  | 2.5d |  |
| 27 |  | Criar Diagrama de Classes, Caso de Uso e Diagrama Objeto Relacional | 4h | 2011-10-18 09:00 | 2011-10-18 14:00 |  |  | 3d | start no earlier than 2011-10-18 09:00 |
| 28 |  | Codificar | 2d | 2011-10-18 09:00 | 2011-10-19 18:00 |  |  | 0d | start no earlier than 2011-10-18 09:00 |
| 29 |  | Revisar | 1d | 2011-10-20 09:00 | 2011-10-20 18:00 | 28 |  | 0d |  |
| 30 |  | Testar | 4h | 2011-10-21 09:00 | 2011-10-21 14:00 | 29 |  | 0d |  |
| 31 |  | Desenvolver apresentação sobre evolução dos requisitos | 2h | 2011-10-21 09:00 | 2011-10-21 11:00 |  |  | 0.25d | start no earlier than 2011-10-21 09:00 |
| 32 |  | Apresentar os requisitos 07, 08 e 09 | 1h | 2011-10-21 09:00 | 2011-10-21 10:00 |  |  | 0.38d | start no earlier than 2011-10-21 09:00 |

## Version 2 (saved 2011-11-25)

Last finish 2011-10-21 → 2011-11-28 (+38d). Complete tasks 16 → 27.

Added:

| ID | Task | Duration | Start | Finish | Predecessors | Constraint | Resources |
| --- | --- | --- | --- | --- | --- | --- | --- |
| 33 | **BUG_ 01 - Adicionar Perca de Calorias** | 6d? | 2011-11-18 09:00 A | 2011-11-25 18:00 |  |  |  |
| 34 | Codificar | 3d? | 2011-11-18 09:00 A | 2011-11-22 18:00 A |  | finish no earlier than 2011-11-22 18:00 | Thiago Abreu; Gustavo |
| 35 | Revisar | 0.5d? | 2011-11-22 09:00 A | 2011-11-22 14:00 A |  | start no earlier than 2011-11-22 09:00 | Bruno; Daniel |
| 36 | Testar | 1d? | 2011-11-24 09:00 A | 2011-11-24 18:00 A |  | start no earlier than 2011-11-24 09:00 | Wlysses |
| 37 | Desenvolver apresentação sobre evolução dos requisitos | 1d? | 2011-11-25 09:00 A | 2011-11-25 18:00 | 36 |  | Bruno |
| 38 | **BUG_02 - Salvar dados de exercicio aerobicos realizados no banco de dados.** | 3d? | 2011-11-25 09:00 | 2011-11-28 18:00 |  |  |  |
| 39 | Codificar | 1d? | 2011-11-25 09:00 | 2011-11-26 18:00 |  | finish no earlier than 2011-11-26 18:00 | Thiago Abreu; Gustavo |
| 40 | Revisar | 1d? | 2011-11-27 09:00 | 2011-11-27 18:00 | 39 | start no earlier than 2011-11-27 09:00 | Bruno; Daniel |
| 41 | Testar | 1d? | 2011-11-28 09:00 | 2011-11-28 18:00 | 40 |  | Wlysses |

Changed:

| ID | Task | Start | Finish | Duration | Complete | Total float |
| --- | --- | --- | --- | --- | --- | --- |
| 1 | **Fitness Mobile - DroidMaster** |  | 2011-10-21 14:00 → 2011-11-28 18:00 (+38d) | 46.5d → 74d? | 68% → 85% |  |
| 24 | **RF_09: Disponibilizar para o usuário o desempenho no percurso rastreado** | 2011-10-17 09:00 A | 2011-10-21 14:00 A |  | 0% → 100% | 0d → none |
| 25 | Realizar análise do requisito | 2011-10-17 09:00 A | 2011-10-17 18:00 A |  | 0% → 100% | 2.5d → none |
| 26 | Definir a interface de interação com o usuário, como o mapa será mostrado | 2011-10-18 09:00 A | 2011-10-18 18:00 A |  | 0% → 100% | 2.5d → none |
| 27 | Criar Diagrama de Classes, Caso de Uso e Diagrama Objeto Relacional | 2011-10-18 09:00 A | 2011-10-18 14:00 A |  | 0% → 100% | 3d → none |
| 28 | Codificar | 2011-10-18 09:00 A | 2011-10-19 18:00 A |  | 0% → 100% | 0d → none |
| 29 | Revisar | 2011-10-20 09:00 A | 2011-10-20 18:00 A |  | 0% → 100% | 0d → none |
| 30 | Testar | 2011-10-21 09:00 A | 2011-10-21 14:00 A |  | 0% → 100% | 0d → none |
| 31 | Desenvolver apresentação sobre evolução dos requisitos | 2011-10-21 09:00 A | 2011-10-21 11:00 A |  | 0% → 100% | 0.25d → none |
| 32 | Apresentar os requisitos 07, 08 e 09 | 2011-10-21 09:00 A | 2011-10-21 10:00 A |  | 0% → 100% | 0.38d → none |
