# Desenvolvimento Cronograma - grafico de dependencia final

How a schedule from MS Project changed from version to version. A marks actual dates.

## Version 1 (saved 2011-04-25)

| ID | WBS | Task | Duration | Start | Finish | Predecessors | Total float |
| --- | --- | --- | --- | --- | --- | --- | --- |
| 1 | 1 | **Projeto Fitness Mobile** | 15d | 2011-04-11 09:00 | 2011-04-29 18:00 |  | 0d |
| 2 | 1.1 | **RNF_03: Definição da UI para Aplicação** | 2.25d | 2011-04-11 09:00 | 2011-04-13 11:00 |  | 0d |
| 3 |  | Realizar análise do requisito | 3h | 2011-04-11 09:00 | 2011-04-11 12:00 |  | 0d |
| 4 |  | Criar Diagrama de Classes, Caso de Uso e Diagrama de Sequencia | 4h | 2011-04-11 13:00 | 2011-04-11 17:00 | 3 | 0d |
| 5 |  | Codificar | 7h | 2011-04-11 17:00 | 2011-04-12 16:00 | 4 | 0d |
| 6 |  | Revisar | 2h | 2011-04-12 16:00 | 2011-04-12 18:00 | 5 | 0d |
| 7 |  | Testar | 2h | 2011-04-13 09:00 | 2011-04-13 11:00 | 6 | 0d |
| 8 | 1.2 | **RNF_06: Configuração do ambiente do projeto** | 1d | 2011-04-11 09:00 | 2011-04-11 18:00 |  | 1.25d |
| 9 |  | Analisar a necessidade do software | 3h | 2011-04-11 09:00 | 2011-04-11 12:00 |  | 1.25d |
| 10 |  | Instalar e configurar o ambiente | 5h | 2011-04-11 13:00 | 2011-04-11 18:00 | 9 | 1.25d |
| 11 | 1.3 | **RF_11: Escolha do modo de visualização** | 0.75d | 2011-04-13 11:00 | 2011-04-13 18:00 | 2 | 11d |
| 12 |  | Realizar análise do requisito | 1h | 2011-04-13 11:00 | 2011-04-13 12:00 |  | 11d |
| 13 |  | Criar Diagrama de Classes, Caso de Uso e Diagrama Objeto Relacional | 30min | 2011-04-13 13:00 | 2011-04-13 13:30 | 12 | 11d |
| 14 |  | Definir a interface de interação com o usuário | 1h | 2011-04-13 13:30 | 2011-04-13 14:30 | 13 | 11d |
| 15 |  | Codificar | 2h | 2011-04-13 14:30 | 2011-04-13 16:30 | 14 | 11d |
| 16 |  | Revisar | 30min | 2011-04-13 16:30 | 2011-04-13 17:00 | 15 | 11d |
| 17 |  | Testar | 1h | 2011-04-13 17:00 | 2011-04-13 18:00 | 16 | 11d |
| 18 | 1.4 | **RF_01: Manter dados do Usuário** | 1d | 2011-04-13 11:00 | 2011-04-14 11:00 | 2, 8 | 3.25d |
| 19 |  | Realizar análise do requisito | 1h | 2011-04-13 11:00 | 2011-04-13 12:00 |  | 3.25d |
| 20 |  | Criar Diagrama de Classes, Caso de Uso e Diagrama Objeto Relacional | 1h | 2011-04-13 13:00 | 2011-04-13 14:00 | 19 | 3.25d |
| 21 |  | Criação da camada de acesso à base de dados | 2h | 2011-04-13 14:00 | 2011-04-13 16:00 | 20 | 3.25d |
| 22 |  | Codificação do CRUD | 2h | 2011-04-13 16:00 | 2011-04-13 18:00 | 21 | 3.25d |
| 23 |  | Revisar | 1h | 2011-04-14 09:00 | 2011-04-14 10:00 | 22 | 3.25d |
| 24 |  | Testar | 1h | 2011-04-14 10:00 | 2011-04-14 11:00 | 23 | 3.25d |
| 25 | 1.5 | **RF_02: Manter exercícios** | 1d | 2011-04-13 11:00 | 2011-04-14 11:00 | 2, 8 | 0d |
| 26 |  | Realizar análise do requisito | 1h | 2011-04-13 11:00 | 2011-04-13 12:00 |  | 0d |
| 27 |  | Criar Diagrama de Classes, Caso de Uso e Diagrama Objeto Relacional | 1h | 2011-04-13 13:00 | 2011-04-13 14:00 | 26 | 0d |
| 28 |  | Levantar estrutura da base de dados | 2h | 2011-04-13 14:00 | 2011-04-13 16:00 | 27 | 0d |
| 29 |  | Codificar | 2h | 2011-04-13 16:00 | 2011-04-13 18:00 | 28 | 0d |
| 30 |  | Revisar | 1h | 2011-04-14 09:00 | 2011-04-14 10:00 | 29 | 0d |
| 31 |  | Testar | 1h | 2011-04-14 10:00 | 2011-04-14 11:00 | 30 | 0d |
| 32 | 1.6 | **RF_03: Manter programa de exercícios** | 1d | 2011-04-14 11:00 | 2011-04-15 11:00 | 31 | 1.75d |
| 33 |  | Realizar análise do requisito | 1h | 2011-04-14 11:00 | 2011-04-14 12:00 |  | 1.75d |
| 34 |  | Criar Diagrama de Classes, Caso de Uso e Diagrama Objeto Relacional | 1h | 2011-04-14 13:00 | 2011-04-14 14:00 | 33 | 1.75d |
| 35 |  | Levantar estrutura da base de dados | 2h | 2011-04-14 14:00 | 2011-04-14 16:00 | 34 | 1.75d |
| 36 |  | Codificar | 2h | 2011-04-14 16:00 | 2011-04-14 18:00 | 35 | 1.75d |
| 37 |  | Revisar | 1h | 2011-04-15 09:00 | 2011-04-15 10:00 | 36 | 1.75d |
| 38 |  | Testar | 1h | 2011-04-15 10:00 | 2011-04-15 11:00 | 37 | 1.75d |
| 39 | 1.7 | **RF_07: Registro de rastreamento do usuário via GPS** | 7.5d | 2011-04-14 11:00 | 2011-04-25 16:00 | 25 | 0d |
| 40 |  | Realizar análise do requisito | 6h | 2011-04-14 11:00 | 2011-04-14 18:00 |  | 0d |
| 41 |  | Criar Diagrama de Classes, Caso de Uso e Diagrama Objeto Relacional | 4h | 2011-04-15 09:00 | 2011-04-15 14:00 | 40 | 0d |
| 42 |  | Criação da funcionalidade de iniciar registro | 9h | 2011-04-15 14:00 | 2011-04-18 15:00 | 41 | 0d |
| 43 |  | Criação da funcionalidade de finalizar registro | 9h | 2011-04-18 15:00 | 2011-04-19 16:00 | 42 | 0d |
| 44 |  | Acesso API para leitura dos dados | 8h | 2011-04-19 16:00 | 2011-04-20 16:00 | 43 | 0d |
| 45 |  | Guardar na base de dados | 9h | 2011-04-20 16:00 | 2011-04-21 17:00 | 44 | 0d |
| 46 |  | Atualização das informações | 10h | 2011-04-21 17:00 | 2011-04-25 10:00 | 45 | 0d |
| 47 |  | Revisar | 2h | 2011-04-25 10:00 | 2011-04-25 12:00 | 46 | 0d |
| 48 |  | Testar | 3h | 2011-04-25 13:00 | 2011-04-25 16:00 | 47 | 0d |
| 49 | 1.8 | **RF_04: Agenda de exercícios executados(Baixa de exercicios)** | 0.5d | 2011-04-15 11:00 | 2011-04-15 16:00 | 32 | 1.75d |
| 50 |  | Realizar análise do requisito | 30min | 2011-04-15 11:00 | 2011-04-15 11:30 |  | 1.75d |
| 51 |  | Criar Diagrama de Classes, Caso de Uso e Diagrama Objeto Relacional | 30min | 2011-04-15 11:30 | 2011-04-15 12:00 | 50 | 1.75d |
| 52 |  | Modelar um Banco de Dados para manter o cadastro dos exercicios do cliente (CRUD) | 1h | 2011-04-15 13:00 | 2011-04-15 14:00 | 51 | 1.75d |
| 53 |  | Codificação | 1h | 2011-04-15 14:00 | 2011-04-15 15:00 | 52 | 1.75d |
| 54 |  | Revisão | 30min | 2011-04-15 15:00 | 2011-04-15 15:30 | 53 | 1.75d |
| 55 |  | Fazer os testes | 30min | 2011-04-15 15:30 | 2011-04-15 16:00 | 54 | 1.75d |
| 56 | 1.9 | **RF_06: Mostrar o desenvolvimento do usuário por periodo** | 7.5d | 2011-04-15 16:00 | 2011-04-27 11:00 | 18, 55 | 1.75d |
| 57 |  | Analisar o requisito | 10h | 2011-04-15 16:00 | 2011-04-18 18:00 |  | 1.75d |
| 58 |  | Criar Diagrama de Classes, Caso de Uso e Diagrama Objeto Relacional | 6h | 2011-04-19 09:00 | 2011-04-19 16:00 | 57 | 1.75d |
| 59 |  | Definir a interface de interação com o usuário | 14h | 2011-04-19 16:00 | 2011-04-21 14:00 | 58 | 1.75d |
| 60 |  | Codificar | 20h | 2011-04-21 14:00 | 2011-04-25 18:00 | 59 | 1.75d |
| 61 |  | Revisar | 4h | 2011-04-26 09:00 | 2011-04-26 14:00 | 60 | 1.75d |
| 62 |  | Testar | 6h | 2011-04-26 14:00 | 2011-04-27 11:00 | 61 | 1.75d |
| 63 | 1.10 | **RF_05: Consultar estatísticas comparativas do programa agendado e das atividades executadas** | 7.5d | 2011-04-15 16:00 | 2011-04-27 11:00 | 49 | 1.75d |
| 64 |  | Realizar análise do requisito | 15h | 2011-04-15 16:00 | 2011-04-19 15:00 |  | 1.75d |
| 65 |  | Criar Diagrama de Classes, Caso de Uso e Diagrama Objeto Relacional | 9h | 2011-04-19 15:00 | 2011-04-20 16:00 | 64 | 1.75d |
| 66 |  | Codificar | 22h | 2011-04-20 16:00 | 2011-04-25 14:00 | 65 | 1.75d |
| 67 |  | Revisar | 5h | 2011-04-25 14:00 | 2011-04-26 10:00 | 66 | 1.75d |
| 68 |  | Testar o requisito | 9h | 2011-04-26 10:00 | 2011-04-27 11:00 | 67 | 1.75d |
| 69 | 1.11 | **RF_10: Controle das atividades durante o exercício** | 0.75d | 2011-04-15 16:00 | 2011-04-18 14:00 | 49 | 8.5d |
| 70 |  | Realizar análise do requisito | 1h | 2011-04-15 16:00 | 2011-04-15 17:00 |  | 8.5d |

| ID | WBS | Task | Duration | Start | Finish | Predecessors | Total float |
| --- | --- | --- | --- | --- | --- | --- | --- |
| 71 |  | Criar Diagrama de Classes, Caso de Uso e Diagrama Objeto Relacional | 30min | 2011-04-15 17:00 | 2011-04-15 17:30 | 70 | 8.5d |
| 72 |  | Definir a interface de interação com o usuário | 30min | 2011-04-15 17:30 | 2011-04-15 18:00 | 71 | 8.5d |
| 73 |  | Codificar | 2h | 2011-04-18 09:00 | 2011-04-18 11:00 | 72 | 8.5d |
| 74 |  | Revisar | 30min | 2011-04-18 11:00 | 2011-04-18 11:30 | 73 | 8.5d |
| 75 |  | Testar | 1.5h | 2011-04-18 11:30 | 2011-04-18 14:00 | 74 | 8.5d |
| 76 | 1.12 | **RF_08: Fornecer Mapa do percurso percorrido** | 2.25d | 2011-04-25 16:00 | 2011-04-27 18:00 | 39 | 0d |
| 77 |  | Realizar análise do requisito | 3h | 2011-04-25 16:00 | 2011-04-26 10:00 |  | 0d |
| 78 |  | Definir a interface de interação com o usuário, como o mapa será mostrado | 2h | 2011-04-26 10:00 | 2011-04-26 12:00 | 77 | 0d |
| 79 |  | Criar Diagrama de Classes, Caso de Uso e Diagrama Objeto Relacional | 1h | 2011-04-26 13:00 | 2011-04-26 14:00 | 78 | 0d |
| 80 |  | Codificar | 7h | 2011-04-26 14:00 | 2011-04-27 12:00 | 79 | 0d |
| 81 |  | Revisar | 1h | 2011-04-27 13:00 | 2011-04-27 14:00 | 80 | 0d |
| 82 |  | Testar | 4h | 2011-04-27 14:00 | 2011-04-27 18:00 | 81 | 0d |
| 83 | 1.13 | **RF_09: Disponibilizar para o usuário o desempenho no percurso rastreado** | 1d | 2011-04-28 09:00 | 2011-04-28 18:00 | 82 | 0d |
| 84 |  | Analisar o requisito | 1h | 2011-04-28 09:00 | 2011-04-28 10:00 |  | 0d |
| 85 |  | Criar Diagrama de Classes, Caso de Uso e Diagrama Objeto Relacional | 1h | 2011-04-28 10:00 | 2011-04-28 11:00 | 84 | 0d |
| 86 |  | Codificar | 3h | 2011-04-28 11:00 | 2011-04-28 15:00 | 85 | 0d |
| 87 |  | Revisar | 30min | 2011-04-28 15:00 | 2011-04-28 15:30 | 86 | 0d |
| 88 |  | Testar o requisito | 2.5h | 2011-04-28 15:30 | 2011-04-28 18:00 | 87 | 0d |
| 89 | 1.14 | **Final do Projeto** | 1d | 2011-04-29 09:00 | 2011-04-29 18:00 | 2, 8, 11, 18, 25, 32, 39, 49, 56, 63, 69, 76, 88 | 0d |
| 90 | 1.14.1 | **RF_12: Exportar Informações** | 1d | 2011-04-29 09:00 | 2011-04-29 18:00 |  | 0d |
| 91 |  | Realizar análise do requisito | 1.5h | 2011-04-29 09:00 | 2011-04-29 10:30 |  | 0d |
| 92 |  | Criar Diagrama de Classes, Caso de Uso e Diagrama de Sequencia | 1h | 2011-04-29 10:30 | 2011-04-29 11:30 | 91 | 0d |
| 93 |  | Codificar | 3h | 2011-04-29 11:30 | 2011-04-29 15:30 | 92 | 0d |
| 94 |  | Revisar | 30min | 2011-04-29 15:30 | 2011-04-29 16:00 | 93 | 0d |
| 95 |  | Testar | 2h | 2011-04-29 16:00 | 2011-04-29 18:00 | 94 | 0d |
| 96 | 1.14.2 | **RF_13: Configuração da Aplicação** | 1d | 2011-04-29 09:00 | 2011-04-29 18:00 |  | 0d |
| 97 |  | Realizar análise do requisito | 1.5h | 2011-04-29 09:00 | 2011-04-29 10:30 |  | 0d |
| 98 |  | Criar Diagrama de Classes, Caso de Uso e Diagrama de Sequencia | 1h | 2011-04-29 10:30 | 2011-04-29 11:30 | 97 | 0d |
| 99 |  | Codificar | 3h | 2011-04-29 11:30 | 2011-04-29 15:30 | 98 | 0d |
| 100 |  | Revisar | 30min | 2011-04-29 15:30 | 2011-04-29 16:00 | 99 | 0d |
| 101 |  | Testar | 2h | 2011-04-29 16:00 | 2011-04-29 18:00 | 100 | 0d |

## Version 2 (saved 2011-04-28)

Note of the change: ADEV - Cronograma com data de inicio

Last finish 2011-04-29 → 2011-08-31 (+124d).

Changed:

| ID | Task | Start | Finish | Duration | Other |
| --- | --- | --- | --- | --- | --- |
| 1 | **Projeto Fitness Mobile** |  | 2011-04-29 18:00 → 2011-08-31 16:00 (+124d) | 15d → 102.75d |  |
| 25 | **RF_02: Manter exercícios** | 2011-04-13 11:00 → 2011-08-15 09:00 (+124d) | 2011-04-14 11:00 → 2011-08-15 18:00 (+123d) |  |  |
| 26 | Realizar análise do requisito | 2011-04-13 11:00 → 2011-08-15 09:00 (+124d) | 2011-04-13 12:00 → 2011-08-15 10:00 (+124d) |  | constraint none → start no earlier than 2011-08-15 09:00 |
| 27 | Criar Diagrama de Classes, Caso de Uso e Diagrama Objeto Relacional | 2011-04-13 13:00 → 2011-08-15 10:00 (+124d) | 2011-04-13 14:00 → 2011-08-15 11:00 (+124d) |  |  |
| 28 | Levantar estrutura da base de dados | 2011-04-13 14:00 → 2011-08-15 11:00 (+124d) | 2011-04-13 16:00 → 2011-08-15 14:00 (+124d) |  |  |
| 29 | Codificar | 2011-04-13 16:00 → 2011-08-15 14:00 (+124d) | 2011-04-13 18:00 → 2011-08-15 16:00 (+124d) |  |  |
| 30 | Revisar | 2011-04-14 09:00 → 2011-08-15 16:00 (+123d) | 2011-04-14 10:00 → 2011-08-15 17:00 (+123d) |  |  |
| 31 | Testar | 2011-04-14 10:00 → 2011-08-15 17:00 (+123d) | 2011-04-14 11:00 → 2011-08-15 18:00 (+123d) |  |  |
| 32 | **RF_03: Manter programa de exercícios** | 2011-04-14 11:00 → 2011-08-16 09:00 (+124d) | 2011-04-15 11:00 → 2011-08-16 18:00 (+123d) |  |  |
| 33 | Realizar análise do requisito | 2011-04-14 11:00 → 2011-08-16 09:00 (+124d) | 2011-04-14 12:00 → 2011-08-16 10:00 (+124d) |  |  |
| 34 | Criar Diagrama de Classes, Caso de Uso e Diagrama Objeto Relacional | 2011-04-14 13:00 → 2011-08-16 10:00 (+124d) | 2011-04-14 14:00 → 2011-08-16 11:00 (+124d) |  |  |
| 35 | Levantar estrutura da base de dados | 2011-04-14 14:00 → 2011-08-16 11:00 (+124d) | 2011-04-14 16:00 → 2011-08-16 14:00 (+124d) |  |  |
| 36 | Codificar | 2011-04-14 16:00 → 2011-08-16 14:00 (+124d) | 2011-04-14 18:00 → 2011-08-16 16:00 (+124d) |  |  |
| 37 | Revisar | 2011-04-15 09:00 → 2011-08-16 16:00 (+123d) | 2011-04-15 10:00 → 2011-08-16 17:00 (+123d) |  |  |
| 38 | Testar | 2011-04-15 10:00 → 2011-08-16 17:00 (+123d) | 2011-04-15 11:00 → 2011-08-16 18:00 (+123d) |  |  |
| 39 | **RF_07: Registro de rastreamento do usuário via GPS** | 2011-04-14 11:00 → 2011-08-16 09:00 (+124d) | 2011-04-25 16:00 → 2011-08-25 14:00 (+122d) |  |  |
| 40 | Realizar análise do requisito | 2011-04-14 11:00 → 2011-08-16 09:00 (+124d) | 2011-04-14 18:00 → 2011-08-16 16:00 (+124d) |  |  |
| 41 | Criar Diagrama de Classes, Caso de Uso e Diagrama Objeto Relacional | 2011-04-15 09:00 → 2011-08-16 16:00 (+123d) | 2011-04-15 14:00 → 2011-08-17 11:00 (+124d) |  |  |
| 42 | Criação da funcionalidade de iniciar registro | 2011-04-15 14:00 → 2011-08-17 11:00 (+124d) | 2011-04-18 15:00 → 2011-08-18 12:00 (+122d) |  |  |
| 43 | Criação da funcionalidade de finalizar registro | 2011-04-18 15:00 → 2011-08-18 13:00 (+122d) | 2011-04-19 16:00 → 2011-08-19 14:00 (+122d) |  |  |
| 44 | Acesso API para leitura dos dados | 2011-04-19 16:00 → 2011-08-19 14:00 (+122d) | 2011-04-20 16:00 → 2011-08-22 14:00 (+124d) |  |  |
| 45 | Guardar na base de dados | 2011-04-20 16:00 → 2011-08-22 14:00 (+124d) | 2011-04-21 17:00 → 2011-08-23 15:00 (+124d) |  |  |
| 46 | Atualização das informações | 2011-04-21 17:00 → 2011-08-23 15:00 (+124d) | 2011-04-25 10:00 → 2011-08-24 17:00 (+121d) |  |  |
| 47 | Revisar | 2011-04-25 10:00 → 2011-08-24 17:00 (+121d) | 2011-04-25 12:00 → 2011-08-25 10:00 (+122d) |  |  |
| 48 | Testar | 2011-04-25 13:00 → 2011-08-25 10:00 (+122d) | 2011-04-25 16:00 → 2011-08-25 14:00 (+122d) |  |  |
| 49 | **RF_04: Agenda de exercícios executados(Baixa de exercicios)** | 2011-04-15 11:00 → 2011-08-17 09:00 (+124d) | 2011-04-15 16:00 → 2011-08-17 14:00 (+124d) |  |  |
| 50 | Realizar análise do requisito | 2011-04-15 11:00 → 2011-08-17 09:00 (+124d) | 2011-04-15 11:30 → 2011-08-17 09:30 (+124d) |  |  |
| 51 | Criar Diagrama de Classes, Caso de Uso e Diagrama Objeto Relacional | 2011-04-15 11:30 → 2011-08-17 09:30 (+124d) | 2011-04-15 12:00 → 2011-08-17 10:00 (+124d) |  |  |
| 52 | Modelar um Banco de Dados para manter o cadastro dos exercicios do cliente (CRUD) | 2011-04-15 13:00 → 2011-08-17 10:00 (+124d) | 2011-04-15 14:00 → 2011-08-17 11:00 (+124d) |  |  |
| 53 | Codificação | 2011-04-15 14:00 → 2011-08-17 11:00 (+124d) | 2011-04-15 15:00 → 2011-08-17 12:00 (+124d) |  |  |
| 54 | Revisão | 2011-04-15 15:00 → 2011-08-17 13:00 (+124d) | 2011-04-15 15:30 → 2011-08-17 13:30 (+124d) |  |  |
| 55 | Fazer os testes | 2011-04-15 15:30 → 2011-08-17 13:30 (+124d) | 2011-04-15 16:00 → 2011-08-17 14:00 (+124d) |  |  |
| 56 | **RF_06: Mostrar o desenvolvimento do usuário por periodo** | 2011-04-15 16:00 → 2011-08-17 14:00 (+124d) | 2011-04-27 11:00 → 2011-08-26 18:00 (+121d) |  |  |
| 57 | Analisar o requisito | 2011-04-15 16:00 → 2011-08-17 14:00 (+124d) | 2011-04-18 18:00 → 2011-08-18 16:00 (+122d) |  |  |
| 58 | Criar Diagrama de Classes, Caso de Uso e Diagrama Objeto Relacional | 2011-04-19 09:00 → 2011-08-18 16:00 (+121d) | 2011-04-19 16:00 → 2011-08-19 14:00 (+122d) |  |  |
| 59 | Definir a interface de interação com o usuário | 2011-04-19 16:00 → 2011-08-19 14:00 (+122d) | 2011-04-21 14:00 → 2011-08-23 11:00 (+124d) |  |  |
| 60 | Codificar | 2011-04-21 14:00 → 2011-08-23 11:00 (+124d) | 2011-04-25 18:00 → 2011-08-25 16:00 (+122d) |  |  |
| 61 | Revisar | 2011-04-26 09:00 → 2011-08-25 16:00 (+121d) | 2011-04-26 14:00 → 2011-08-26 11:00 (+122d) |  |  |
| 62 | Testar | 2011-04-26 14:00 → 2011-08-26 11:00 (+122d) | 2011-04-27 11:00 → 2011-08-26 18:00 (+121d) |  |  |
| 63 | **RF_05: Consultar estatísticas comparativas do programa agendado e das atividades executadas** | 2011-04-15 16:00 → 2011-08-17 14:00 (+124d) | 2011-04-27 11:00 → 2011-08-26 18:00 (+121d) |  |  |
| 64 | Realizar análise do requisito | 2011-04-15 16:00 → 2011-08-17 14:00 (+124d) | 2011-04-19 15:00 → 2011-08-19 12:00 (+122d) |  |  |
| 65 | Criar Diagrama de Classes, Caso de Uso e Diagrama Objeto Relacional | 2011-04-19 15:00 → 2011-08-19 13:00 (+122d) | 2011-04-20 16:00 → 2011-08-22 14:00 (+124d) |  |  |
| 66 | Codificar | 2011-04-20 16:00 → 2011-08-22 14:00 (+124d) | 2011-04-25 14:00 → 2011-08-25 11:00 (+122d) |  |  |
| 67 | Revisar | 2011-04-25 14:00 → 2011-08-25 11:00 (+122d) | 2011-04-26 10:00 → 2011-08-25 17:00 (+121d) |  |  |
| 68 | Testar o requisito | 2011-04-26 10:00 → 2011-08-25 17:00 (+121d) | 2011-04-27 11:00 → 2011-08-26 18:00 (+121d) |  |  |
| 69 | **RF_10: Controle das atividades durante o exercício** | 2011-04-15 16:00 → 2011-08-17 14:00 (+124d) | 2011-04-18 14:00 → 2011-08-18 11:00 (+122d) |  |  |
| 70 | Realizar análise do requisito | 2011-04-15 16:00 → 2011-08-17 14:00 (+124d) | 2011-04-15 17:00 → 2011-08-17 15:00 (+124d) |  |  |
| 71 | Criar Diagrama de Classes, Caso de Uso e Diagrama Objeto Relacional | 2011-04-15 17:00 → 2011-08-17 15:00 (+124d) | 2011-04-15 17:30 → 2011-08-17 15:30 (+124d) |  |  |
| 72 | Definir a interface de interação com o usuário | 2011-04-15 17:30 → 2011-08-17 15:30 (+124d) | 2011-04-15 18:00 → 2011-08-17 16:00 (+124d) |  |  |
| 73 | Codificar | 2011-04-18 09:00 → 2011-08-17 16:00 (+121d) | 2011-04-18 11:00 → 2011-08-17 18:00 (+121d) |  |  |
| 74 | Revisar | 2011-04-18 11:00 → 2011-08-18 09:00 (+122d) | 2011-04-18 11:30 → 2011-08-18 09:30 (+122d) |  |  |
| 75 | Testar | 2011-04-18 11:30 → 2011-08-18 09:30 (+122d) | 2011-04-18 14:00 → 2011-08-18 11:00 (+122d) |  |  |
| 76 | **RF_08: Fornecer Mapa do percurso percorrido** | 2011-04-25 16:00 → 2011-08-25 14:00 (+122d) | 2011-04-27 18:00 → 2011-08-29 16:00 (+124d) |  |  |
| 77 | Realizar análise do requisito | 2011-04-25 16:00 → 2011-08-25 14:00 (+122d) | 2011-04-26 10:00 → 2011-08-25 17:00 (+121d) |  |  |
| 78 | Definir a interface de interação com o usuário, como o mapa será mostrado | 2011-04-26 10:00 → 2011-08-25 17:00 (+121d) | 2011-04-26 12:00 → 2011-08-26 10:00 (+122d) |  |  |
| 79 | Criar Diagrama de Classes, Caso de Uso e Diagrama Objeto Relacional | 2011-04-26 13:00 → 2011-08-26 10:00 (+122d) | 2011-04-26 14:00 → 2011-08-26 11:00 (+122d) |  |  |
| 80 | Codificar | 2011-04-26 14:00 → 2011-08-26 11:00 (+122d) | 2011-04-27 12:00 → 2011-08-29 10:00 (+124d) |  |  |
| 81 | Revisar | 2011-04-27 13:00 → 2011-08-29 10:00 (+124d) | 2011-04-27 14:00 → 2011-08-29 11:00 (+124d) |  |  |
| 82 | Testar | 2011-04-27 14:00 → 2011-08-29 11:00 (+124d) | 2011-04-27 18:00 → 2011-08-29 16:00 (+124d) |  |  |
| 83 | **RF_09: Disponibilizar para o usuário o desempenho no percurso rastreado** | 2011-04-28 09:00 → 2011-08-29 16:00 (+123d) | 2011-04-28 18:00 → 2011-08-30 16:00 (+124d) |  |  |
| 84 | Analisar o requisito | 2011-04-28 09:00 → 2011-08-29 16:00 (+123d) | 2011-04-28 10:00 → 2011-08-29 17:00 (+123d) |  |  |
| 85 | Criar Diagrama de Classes, Caso de Uso e Diagrama Objeto Relacional | 2011-04-28 10:00 → 2011-08-29 17:00 (+123d) | 2011-04-28 11:00 → 2011-08-29 18:00 (+123d) |  |  |
| 86 | Codificar | 2011-04-28 11:00 → 2011-08-30 09:00 (+124d) | 2011-04-28 15:00 → 2011-08-30 12:00 (+124d) |  |  |
| 87 | Revisar | 2011-04-28 15:00 → 2011-08-30 13:00 (+124d) | 2011-04-28 15:30 → 2011-08-30 13:30 (+124d) |  |  |
| 88 | Testar o requisito | 2011-04-28 15:30 → 2011-08-30 13:30 (+124d) | 2011-04-28 18:00 → 2011-08-30 16:00 (+124d) |  |  |
| 89 | **Final do Projeto** | 2011-04-29 09:00 → 2011-08-30 16:00 (+123d) | 2011-04-29 18:00 → 2011-08-31 16:00 (+124d) |  |  |
| 90 | **RF_12: Exportar Informações** | 2011-04-29 09:00 → 2011-08-30 16:00 (+123d) | 2011-04-29 18:00 → 2011-08-31 16:00 (+124d) |  |  |
| 91 | Realizar análise do requisito | 2011-04-29 09:00 → 2011-08-30 16:00 (+123d) | 2011-04-29 10:30 → 2011-08-30 17:30 (+123d) |  |  |
| 92 | Criar Diagrama de Classes, Caso de Uso e Diagrama de Sequencia | 2011-04-29 10:30 → 2011-08-30 17:30 (+123d) | 2011-04-29 11:30 → 2011-08-31 09:30 (+124d) |  |  |
| 93 | Codificar | 2011-04-29 11:30 → 2011-08-31 09:30 (+124d) | 2011-04-29 15:30 → 2011-08-31 13:30 (+124d) |  |  |

| ID | Task | Start | Finish |
| --- | --- | --- | --- |
| 94 | Revisar | 2011-04-29 15:30 → 2011-08-31 13:30 (+124d) | 2011-04-29 16:00 → 2011-08-31 14:00 (+124d) |
| 95 | Testar | 2011-04-29 16:00 → 2011-08-31 14:00 (+124d) | 2011-04-29 18:00 → 2011-08-31 16:00 (+124d) |
| 96 | **RF_13: Configuração da Aplicação** | 2011-04-29 09:00 → 2011-08-30 16:00 (+123d) | 2011-04-29 18:00 → 2011-08-31 16:00 (+124d) |
| 97 | Realizar análise do requisito | 2011-04-29 09:00 → 2011-08-30 16:00 (+123d) | 2011-04-29 10:30 → 2011-08-30 17:30 (+123d) |
| 98 | Criar Diagrama de Classes, Caso de Uso e Diagrama de Sequencia | 2011-04-29 10:30 → 2011-08-30 17:30 (+123d) | 2011-04-29 11:30 → 2011-08-31 09:30 (+124d) |
| 99 | Codificar | 2011-04-29 11:30 → 2011-08-31 09:30 (+124d) | 2011-04-29 15:30 → 2011-08-31 13:30 (+124d) |
| 100 | Revisar | 2011-04-29 15:30 → 2011-08-31 13:30 (+124d) | 2011-04-29 16:00 → 2011-08-31 14:00 (+124d) |
| 101 | Testar | 2011-04-29 16:00 → 2011-08-31 14:00 (+124d) | 2011-04-29 18:00 → 2011-08-31 16:00 (+124d) |

## Version 3 (saved 2011-05-02)

Note of the change: DroidMaster - Atualização das datas e Recursos para o requisito RNF_03.

Last finish 2011-08-31 → 2011-09-06 (+6d).

Changed:

| ID | Task | Start | Finish | Duration | Total float | Other |
| --- | --- | --- | --- | --- | --- | --- |
| 1 | **Projeto Fitness Mobile** |  | 2011-08-31 16:00 → 2011-09-06 16:00 (+6d) | 102.75d → 106.75d |  |  |
| 2 | **RNF_03: Definição da UI para Aplicação** | 2011-04-11 09:00 → 2011-08-15 09:00 (+126d) | 2011-04-13 11:00 → 2011-08-17 11:00 (+126d) |  | 87.75d → 1.75d | resources none → DROIDMASTER |
| 3 | Realizar análise do requisito | 2011-04-11 09:00 → 2011-08-15 09:00 (+126d) | 2011-04-11 12:00 → 2011-08-15 12:00 (+126d) |  | 87.75d → 1.75d | constraint none → start no earlier than 2011-08-15 09:00; resources none → Daniel |
| 4 | Criar Diagrama de Classes, Caso de Uso e Diagrama de Sequencia | 2011-04-11 13:00 → 2011-08-15 13:00 (+126d) | 2011-04-11 17:00 → 2011-08-15 17:00 (+126d) |  | 87.75d → 1.75d | resources none → Daniel |
| 5 | Codificar | 2011-04-11 17:00 → 2011-08-15 17:00 (+126d) | 2011-04-12 16:00 → 2011-08-16 16:00 (+126d) |  | 87.75d → 1.75d | resources none → Rafael |
| 6 | Revisar | 2011-04-12 16:00 → 2011-08-16 16:00 (+126d) | 2011-04-12 18:00 → 2011-08-16 18:00 (+126d) |  | 87.75d → 1.75d | resources none → Wlysses |
| 7 | Testar | 2011-04-13 09:00 → 2011-08-17 09:00 (+126d) | 2011-04-13 11:00 → 2011-08-17 11:00 (+126d) |  | 87.75d → 1.75d | resources none → Wlysses |
| 11 | **RF_11: Escolha do modo de visualização** | 2011-04-13 11:00 → 2011-08-17 11:00 (+126d) | 2011-04-13 18:00 → 2011-08-17 18:00 (+126d) |  | 98.75d → 12.75d |  |
| 12 | Realizar análise do requisito | 2011-04-13 11:00 → 2011-08-17 11:00 (+126d) | 2011-04-13 12:00 → 2011-08-17 12:00 (+126d) |  | 98.75d → 12.75d |  |
| 13 | Criar Diagrama de Classes, Caso de Uso e Diagrama Objeto Relacional | 2011-04-13 13:00 → 2011-08-17 13:00 (+126d) | 2011-04-13 13:30 → 2011-08-17 13:30 (+126d) |  | 98.75d → 12.75d |  |
| 14 | Definir a interface de interação com o usuário | 2011-04-13 13:30 → 2011-08-17 13:30 (+126d) | 2011-04-13 14:30 → 2011-08-17 14:30 (+126d) |  | 98.75d → 12.75d |  |
| 15 | Codificar | 2011-04-13 14:30 → 2011-08-17 14:30 (+126d) | 2011-04-13 16:30 → 2011-08-17 16:30 (+126d) |  | 98.75d → 12.75d |  |
| 16 | Revisar | 2011-04-13 16:30 → 2011-08-17 16:30 (+126d) | 2011-04-13 17:00 → 2011-08-17 17:00 (+126d) |  | 98.75d → 12.75d |  |
| 17 | Testar | 2011-04-13 17:00 → 2011-08-17 17:00 (+126d) | 2011-04-13 18:00 → 2011-08-17 18:00 (+126d) |  | 98.75d → 12.75d |  |
| 18 | **RF_01: Manter dados do Usuário** | 2011-04-13 11:00 → 2011-08-17 11:00 (+126d) | 2011-04-14 11:00 → 2011-08-18 11:00 (+126d) |  | 91d → 5d |  |
| 19 | Realizar análise do requisito | 2011-04-13 11:00 → 2011-08-17 11:00 (+126d) | 2011-04-13 12:00 → 2011-08-17 12:00 (+126d) |  | 91d → 5d |  |
| 20 | Criar Diagrama de Classes, Caso de Uso e Diagrama Objeto Relacional | 2011-04-13 13:00 → 2011-08-17 13:00 (+126d) | 2011-04-13 14:00 → 2011-08-17 14:00 (+126d) |  | 91d → 5d |  |
| 21 | Criação da camada de acesso à base de dados | 2011-04-13 14:00 → 2011-08-17 14:00 (+126d) | 2011-04-13 16:00 → 2011-08-17 16:00 (+126d) |  | 91d → 5d |  |
| 22 | Codificação do CRUD | 2011-04-13 16:00 → 2011-08-17 16:00 (+126d) | 2011-04-13 18:00 → 2011-08-17 18:00 (+126d) |  | 91d → 5d |  |
| 23 | Revisar | 2011-04-14 09:00 → 2011-08-18 09:00 (+126d) | 2011-04-14 10:00 → 2011-08-18 10:00 (+126d) |  | 91d → 5d |  |
| 24 | Testar | 2011-04-14 10:00 → 2011-08-18 10:00 (+126d) | 2011-04-14 11:00 → 2011-08-18 11:00 (+126d) |  | 91d → 5d |  |
| 25 | **RF_02: Manter exercícios** | 2011-08-15 09:00 → 2011-08-17 11:00 (+2d) | 2011-08-15 18:00 → 2011-08-18 11:00 (+3d) |  | 0d → 1.75d |  |
| 26 | Realizar análise do requisito | 2011-08-15 09:00 → 2011-08-17 11:00 (+2d) | 2011-08-15 10:00 → 2011-08-17 12:00 (+2d) |  | 0d → 1.75d |  |
| 27 | Criar Diagrama de Classes, Caso de Uso e Diagrama Objeto Relacional | 2011-08-15 10:00 → 2011-08-17 13:00 (+2d) | 2011-08-15 11:00 → 2011-08-17 14:00 (+2d) |  | 0d → 1.75d |  |
| 28 | Levantar estrutura da base de dados | 2011-08-15 11:00 → 2011-08-17 14:00 (+2d) | 2011-08-15 14:00 → 2011-08-17 16:00 (+2d) |  | 0d → 1.75d |  |
| 29 | Codificar | 2011-08-15 14:00 → 2011-08-17 16:00 (+2d) | 2011-08-15 16:00 → 2011-08-17 18:00 (+2d) |  | 0d → 1.75d |  |
| 30 | Revisar | 2011-08-15 16:00 → 2011-08-18 09:00 (+3d) | 2011-08-15 17:00 → 2011-08-18 10:00 (+3d) |  | 0d → 1.75d |  |
| 31 | Testar | 2011-08-15 17:00 → 2011-08-18 10:00 (+3d) | 2011-08-15 18:00 → 2011-08-18 11:00 (+3d) |  | 0d → 1.75d |  |
| 32 | **RF_03: Manter programa de exercícios** | 2011-08-16 09:00 → 2011-08-18 11:00 (+2d) | 2011-08-16 18:00 → 2011-08-19 11:00 (+3d) |  | 1.75d → 3.5d |  |
| 33 | Realizar análise do requisito | 2011-08-16 09:00 → 2011-08-18 11:00 (+2d) | 2011-08-16 10:00 → 2011-08-18 12:00 (+2d) |  | 1.75d → 3.5d |  |
| 34 | Criar Diagrama de Classes, Caso de Uso e Diagrama Objeto Relacional | 2011-08-16 10:00 → 2011-08-18 13:00 (+2d) | 2011-08-16 11:00 → 2011-08-18 14:00 (+2d) |  | 1.75d → 3.5d |  |
| 35 | Levantar estrutura da base de dados | 2011-08-16 11:00 → 2011-08-18 14:00 (+2d) | 2011-08-16 14:00 → 2011-08-18 16:00 (+2d) |  | 1.75d → 3.5d |  |
| 36 | Codificar | 2011-08-16 14:00 → 2011-08-18 16:00 (+2d) | 2011-08-16 16:00 → 2011-08-18 18:00 (+2d) |  | 1.75d → 3.5d |  |
| 37 | Revisar | 2011-08-16 16:00 → 2011-08-19 09:00 (+3d) | 2011-08-16 17:00 → 2011-08-19 10:00 (+3d) |  | 1.75d → 3.5d |  |
| 38 | Testar | 2011-08-16 17:00 → 2011-08-19 10:00 (+3d) | 2011-08-16 18:00 → 2011-08-19 11:00 (+3d) |  | 1.75d → 3.5d |  |
| 39 | **RF_07: Registro de rastreamento do usuário via GPS** | 2011-08-16 09:00 → 2011-08-22 09:00 (+6d) | 2011-08-25 14:00 → 2011-08-31 14:00 (+6d) |  |  |  |
| 40 | Realizar análise do requisito | 2011-08-16 09:00 → 2011-08-22 09:00 (+6d) | 2011-08-16 16:00 → 2011-08-22 16:00 (+6d) |  |  | constraint none → start no earlier than 2011-08-22 09:00 |
| 41 | Criar Diagrama de Classes, Caso de Uso e Diagrama Objeto Relacional | 2011-08-16 16:00 → 2011-08-22 16:00 (+6d) | 2011-08-17 11:00 → 2011-08-23 11:00 (+6d) |  |  |  |
| 42 | Criação da funcionalidade de iniciar registro | 2011-08-17 11:00 → 2011-08-23 11:00 (+6d) | 2011-08-18 12:00 → 2011-08-24 12:00 (+6d) |  |  |  |
| 43 | Criação da funcionalidade de finalizar registro | 2011-08-18 13:00 → 2011-08-24 13:00 (+6d) | 2011-08-19 14:00 → 2011-08-25 14:00 (+6d) |  |  |  |
| 44 | Acesso API para leitura dos dados | 2011-08-19 14:00 → 2011-08-25 14:00 (+6d) | 2011-08-22 14:00 → 2011-08-26 14:00 (+4d) |  |  |  |
| 45 | Guardar na base de dados | 2011-08-22 14:00 → 2011-08-26 14:00 (+4d) | 2011-08-23 15:00 → 2011-08-29 15:00 (+6d) |  |  |  |
| 46 | Atualização das informações | 2011-08-23 15:00 → 2011-08-29 15:00 (+6d) | 2011-08-24 17:00 → 2011-08-30 17:00 (+6d) |  |  |  |
| 47 | Revisar | 2011-08-24 17:00 → 2011-08-30 17:00 (+6d) | 2011-08-25 10:00 → 2011-08-31 10:00 (+6d) |  |  |  |
| 48 | Testar | 2011-08-25 10:00 → 2011-08-31 10:00 (+6d) | 2011-08-25 14:00 → 2011-08-31 14:00 (+6d) |  |  |  |
| 49 | **RF_04: Agenda de exercícios executados(Baixa de exercicios)** | 2011-08-17 09:00 → 2011-08-19 11:00 (+2d) | 2011-08-17 14:00 → 2011-08-19 16:00 (+2d) |  | 1.75d → 3.5d |  |
| 50 | Realizar análise do requisito | 2011-08-17 09:00 → 2011-08-19 11:00 (+2d) | 2011-08-17 09:30 → 2011-08-19 11:30 (+2d) |  | 1.75d → 3.5d |  |
| 51 | Criar Diagrama de Classes, Caso de Uso e Diagrama Objeto Relacional | 2011-08-17 09:30 → 2011-08-19 11:30 (+2d) | 2011-08-17 10:00 → 2011-08-19 12:00 (+2d) |  | 1.75d → 3.5d |  |
| 52 | Modelar um Banco de Dados para manter o cadastro dos exercicios do cliente (CRUD) | 2011-08-17 10:00 → 2011-08-19 13:00 (+2d) | 2011-08-17 11:00 → 2011-08-19 14:00 (+2d) |  | 1.75d → 3.5d |  |
| 53 | Codificação | 2011-08-17 11:00 → 2011-08-19 14:00 (+2d) | 2011-08-17 12:00 → 2011-08-19 15:00 (+2d) |  | 1.75d → 3.5d |  |
| 54 | Revisão | 2011-08-17 13:00 → 2011-08-19 15:00 (+2d) | 2011-08-17 13:30 → 2011-08-19 15:30 (+2d) |  | 1.75d → 3.5d |  |
| 55 | Fazer os testes | 2011-08-17 13:30 → 2011-08-19 15:30 (+2d) | 2011-08-17 14:00 → 2011-08-19 16:00 (+2d) |  | 1.75d → 3.5d |  |
| 56 | **RF_06: Mostrar o desenvolvimento do usuário por periodo** | 2011-08-17 14:00 → 2011-08-19 16:00 (+2d) | 2011-08-26 18:00 → 2011-08-31 11:00 (+5d) |  | 1.75d → 3.5d |  |
| 57 | Analisar o requisito | 2011-08-17 14:00 → 2011-08-19 16:00 (+2d) | 2011-08-18 16:00 → 2011-08-22 18:00 (+4d) |  | 1.75d → 3.5d |  |
| 58 | Criar Diagrama de Classes, Caso de Uso e Diagrama Objeto Relacional | 2011-08-18 16:00 → 2011-08-23 09:00 (+5d) | 2011-08-19 14:00 → 2011-08-23 16:00 (+4d) |  | 1.75d → 3.5d |  |
| 59 | Definir a interface de interação com o usuário | 2011-08-19 14:00 → 2011-08-23 16:00 (+4d) | 2011-08-23 11:00 → 2011-08-25 14:00 (+2d) |  | 1.75d → 3.5d |  |
| 60 | Codificar | 2011-08-23 11:00 → 2011-08-25 14:00 (+2d) | 2011-08-25 16:00 → 2011-08-29 18:00 (+4d) |  | 1.75d → 3.5d |  |
| 61 | Revisar | 2011-08-25 16:00 → 2011-08-30 09:00 (+5d) | 2011-08-26 11:00 → 2011-08-30 14:00 (+4d) |  | 1.75d → 3.5d |  |
| 62 | Testar | 2011-08-26 11:00 → 2011-08-30 14:00 (+4d) | 2011-08-26 18:00 → 2011-08-31 11:00 (+5d) |  | 1.75d → 3.5d |  |
| 63 | **RF_05: Consultar estatísticas comparativas do programa agendado e das atividades executadas** | 2011-08-17 14:00 → 2011-08-19 16:00 (+2d) | 2011-08-26 18:00 → 2011-08-31 11:00 (+5d) |  | 1.75d → 3.5d |  |
| 64 | Realizar análise do requisito | 2011-08-17 14:00 → 2011-08-19 16:00 (+2d) | 2011-08-19 12:00 → 2011-08-23 15:00 (+4d) |  | 1.75d → 3.5d |  |
| 65 | Criar Diagrama de Classes, Caso de Uso e Diagrama Objeto Relacional | 2011-08-19 13:00 → 2011-08-23 15:00 (+4d) | 2011-08-22 14:00 → 2011-08-24 16:00 (+2d) |  | 1.75d → 3.5d |  |
| 66 | Codificar | 2011-08-22 14:00 → 2011-08-24 16:00 (+2d) | 2011-08-25 11:00 → 2011-08-29 14:00 (+4d) |  | 1.75d → 3.5d |  |
| 67 | Revisar | 2011-08-25 11:00 → 2011-08-29 14:00 (+4d) | 2011-08-25 17:00 → 2011-08-30 10:00 (+5d) |  | 1.75d → 3.5d |  |
| 68 | Testar o requisito | 2011-08-25 17:00 → 2011-08-30 10:00 (+5d) | 2011-08-26 18:00 → 2011-08-31 11:00 (+5d) |  | 1.75d → 3.5d |  |
| 69 | **RF_10: Controle das atividades durante o exercício** | 2011-08-17 14:00 → 2011-08-19 16:00 (+2d) | 2011-08-18 11:00 → 2011-08-22 14:00 (+4d) |  | 8.5d → 10.25d |  |
| 70 | Realizar análise do requisito | 2011-08-17 14:00 → 2011-08-19 16:00 (+2d) | 2011-08-17 15:00 → 2011-08-19 17:00 (+2d) |  | 8.5d → 10.25d |  |
| 71 | Criar Diagrama de Classes, Caso de Uso e Diagrama Objeto Relacional | 2011-08-17 15:00 → 2011-08-19 17:00 (+2d) | 2011-08-17 15:30 → 2011-08-19 17:30 (+2d) |  | 8.5d → 10.25d |  |
| 72 | Definir a interface de interação com o usuário | 2011-08-17 15:30 → 2011-08-19 17:30 (+2d) | 2011-08-17 16:00 → 2011-08-19 18:00 (+2d) |  | 8.5d → 10.25d |  |
| 73 | Codificar | 2011-08-17 16:00 → 2011-08-22 09:00 (+5d) | 2011-08-17 18:00 → 2011-08-22 11:00 (+5d) |  | 8.5d → 10.25d |  |

| ID | Task | Start | Finish | Total float |
| --- | --- | --- | --- | --- |
| 74 | Revisar | 2011-08-18 09:00 → 2011-08-22 11:00 (+4d) | 2011-08-18 09:30 → 2011-08-22 11:30 (+4d) | 8.5d → 10.25d |
| 75 | Testar | 2011-08-18 09:30 → 2011-08-22 11:30 (+4d) | 2011-08-18 11:00 → 2011-08-22 14:00 (+4d) | 8.5d → 10.25d |
| 76 | **RF_08: Fornecer Mapa do percurso percorrido** | 2011-08-25 14:00 → 2011-08-31 14:00 (+6d) | 2011-08-29 16:00 → 2011-09-02 16:00 (+4d) |  |
| 77 | Realizar análise do requisito | 2011-08-25 14:00 → 2011-08-31 14:00 (+6d) | 2011-08-25 17:00 → 2011-08-31 17:00 (+6d) |  |
| 78 | Definir a interface de interação com o usuário, como o mapa será mostrado | 2011-08-25 17:00 → 2011-08-31 17:00 (+6d) | 2011-08-26 10:00 → 2011-09-01 10:00 (+6d) |  |
| 79 | Criar Diagrama de Classes, Caso de Uso e Diagrama Objeto Relacional | 2011-08-26 10:00 → 2011-09-01 10:00 (+6d) | 2011-08-26 11:00 → 2011-09-01 11:00 (+6d) |  |
| 80 | Codificar | 2011-08-26 11:00 → 2011-09-01 11:00 (+6d) | 2011-08-29 10:00 → 2011-09-02 10:00 (+4d) |  |
| 81 | Revisar | 2011-08-29 10:00 → 2011-09-02 10:00 (+4d) | 2011-08-29 11:00 → 2011-09-02 11:00 (+4d) |  |
| 82 | Testar | 2011-08-29 11:00 → 2011-09-02 11:00 (+4d) | 2011-08-29 16:00 → 2011-09-02 16:00 (+4d) |  |
| 83 | **RF_09: Disponibilizar para o usuário o desempenho no percurso rastreado** | 2011-08-29 16:00 → 2011-09-02 16:00 (+4d) | 2011-08-30 16:00 → 2011-09-05 16:00 (+6d) |  |
| 84 | Analisar o requisito | 2011-08-29 16:00 → 2011-09-02 16:00 (+4d) | 2011-08-29 17:00 → 2011-09-02 17:00 (+4d) |  |
| 85 | Criar Diagrama de Classes, Caso de Uso e Diagrama Objeto Relacional | 2011-08-29 17:00 → 2011-09-02 17:00 (+4d) | 2011-08-29 18:00 → 2011-09-02 18:00 (+4d) |  |
| 86 | Codificar | 2011-08-30 09:00 → 2011-09-05 09:00 (+6d) | 2011-08-30 12:00 → 2011-09-05 12:00 (+6d) |  |
| 87 | Revisar | 2011-08-30 13:00 → 2011-09-05 13:00 (+6d) | 2011-08-30 13:30 → 2011-09-05 13:30 (+6d) |  |
| 88 | Testar o requisito | 2011-08-30 13:30 → 2011-09-05 13:30 (+6d) | 2011-08-30 16:00 → 2011-09-05 16:00 (+6d) |  |
| 89 | **Final do Projeto** | 2011-08-30 16:00 → 2011-09-05 16:00 (+6d) | 2011-08-31 16:00 → 2011-09-06 16:00 (+6d) |  |
| 90 | **RF_12: Exportar Informações** | 2011-08-30 16:00 → 2011-09-05 16:00 (+6d) | 2011-08-31 16:00 → 2011-09-06 16:00 (+6d) |  |
| 91 | Realizar análise do requisito | 2011-08-30 16:00 → 2011-09-05 16:00 (+6d) | 2011-08-30 17:30 → 2011-09-05 17:30 (+6d) |  |
| 92 | Criar Diagrama de Classes, Caso de Uso e Diagrama de Sequencia | 2011-08-30 17:30 → 2011-09-05 17:30 (+6d) | 2011-08-31 09:30 → 2011-09-06 09:30 (+6d) |  |
| 93 | Codificar | 2011-08-31 09:30 → 2011-09-06 09:30 (+6d) | 2011-08-31 13:30 → 2011-09-06 13:30 (+6d) |  |
| 94 | Revisar | 2011-08-31 13:30 → 2011-09-06 13:30 (+6d) | 2011-08-31 14:00 → 2011-09-06 14:00 (+6d) |  |
| 95 | Testar | 2011-08-31 14:00 → 2011-09-06 14:00 (+6d) | 2011-08-31 16:00 → 2011-09-06 16:00 (+6d) |  |
| 96 | **RF_13: Configuração da Aplicação** | 2011-08-30 16:00 → 2011-09-05 16:00 (+6d) | 2011-08-31 16:00 → 2011-09-06 16:00 (+6d) |  |
| 97 | Realizar análise do requisito | 2011-08-30 16:00 → 2011-09-05 16:00 (+6d) | 2011-08-30 17:30 → 2011-09-05 17:30 (+6d) |  |
| 98 | Criar Diagrama de Classes, Caso de Uso e Diagrama de Sequencia | 2011-08-30 17:30 → 2011-09-05 17:30 (+6d) | 2011-08-31 09:30 → 2011-09-06 09:30 (+6d) |  |
| 99 | Codificar | 2011-08-31 09:30 → 2011-09-06 09:30 (+6d) | 2011-08-31 13:30 → 2011-09-06 13:30 (+6d) |  |
| 100 | Revisar | 2011-08-31 13:30 → 2011-09-06 13:30 (+6d) | 2011-08-31 14:00 → 2011-09-06 14:00 (+6d) |  |
| 101 | Testar | 2011-08-31 14:00 → 2011-09-06 14:00 (+6d) | 2011-08-31 16:00 → 2011-09-06 16:00 (+6d) |  |
